# ПроектСИЭР v.0.2

Schedule from MS Project, 2024-09-02 to 2025-02-11.
DIT

## Calendars

- Стандартный: Mon-Fri 09:00-13:00, 14:00-18:00; Sat-Sun off.

## Resources

| Resource | Group |
| --- | --- |
| Методолог1 | Методологи |
| Разработчик1 | Разраб |
| Аналитик1 | Аналитики |
| Фронт-разработчик1 | Разраб |
| Методолог2 | Методологи |
| Методолог3 | Методологи |
| Аналитик2 | Аналитики |
| Разработчик2 | Разраб |
| Фронт-разработчик2 | Разраб |
| Аналитик3 | Аналитики |
| Разработчик3 | Разраб |
| Фронт-разработчик3 | Разраб |
| Методолог4 | Методологи |
| Методолог5 |  |
| Методолог6 |  |
| Методолог1, Методолог2 |  |
| МПМ емкость фич порядка 6000 делали 2 года |  |
| 2200 |  |
| МАП 1.0 = 2200 |  |
| МАП 1.0 = 2200 (2 года) |  |
| МАП 1.0 = 2200 (1,5 года) |  |
| МАП 1.0 = 2200 (1,5 чгода) |  |
| МАП 1.0 = емкость 2200 ч (длит. 1,5 чгода) |  |
| МАП 1.0 = емкость 3500 ч (длит. 1,5 года) |  |

## Schedule

| ID | WBS | Task | Type | Duration | Start | Finish | Predecessors | Total slack | Constraint | Resources | Work | Версия |
| --- | --- | --- | --- | --- | --- | --- | --- | --- | --- | --- | --- | --- |
| 1 | 1 | **Типовой шаблон СИЭР (средний модуль)** |  | 116.9d | 2024-09-02 | 2025-02-11 |  | 0d |  |  |  |  |
| 2 | 1.1 | **Вехи** |  | 116.9d | 2024-09-02 | 2025-02-11 |  | 0d |  |  |  |  |
| 3 | 1.1.1 | Старт | milestone | 0d | 2024-09-02 | 2024-09-02 |  | 0d | start no earlier than 2024-09-02 |  |  |  |
| 4 | 1.1.2 | 0.1 - 0.4 Первичный анализ завершен | milestone | 0d | 2024-09-25 | 2024-09-25 | 12 | 99.39d |  |  |  |  |
| 5 | 1.1.3 | 0.5 - Прототип для согласования с ПО | milestone | 0d | 2024-10-14 | 2024-10-14 | 21 | 86.75d |  |  |  |  |
| 6 | 1.1.4 | 0.6 Прототип с отработкой замечаний ПО и показ ФЗ | milestone | 0d | 2024-11-11 | 2024-11-11 | 22 | 66.75d |  |  |  |  |
| 7 | 1.1.5 | 0.9 ФГ по каркасу с основными ЭФ и некоторыми ПФ | milestone | 0d | 2024-12-11 | 2024-12-11 | 25 | 44.75d |  |  |  |  |
| 8 | 1.1.6 | 0.9.1 Совместное тестирование всех ГЛАВНЫХ БП, ЭФ и ПФ. Начало обучения. | milestone | 0d | 2025-01-02 | 2025-01-02 | 32 | 28.81d |  |  |  |  |
| 9 | 1.1.7 | 0.9.2 ОЭ полноценная но не стабилизированная версия. Обучение финальное. "Быстрый" выход в прод. | milestone | 0d | 2025-01-20 | 2025-01-20 | 35 | 16.25d |  |  |  |  |
| 10 | 1.1.8 | 1.0 ОПЭ стабильная версия с hot fixes | milestone | 0d | 2025-02-11 | 2025-02-11 | 41 | 0d |  |  |  |  |
| 11 | 2 | **Разработка на КСИЭР** |  | 116.9d? | 2024-09-02 | 2025-02-11 |  | 0d |  |  | 1682.63h |  |
| 12 | 2.1 | **0.1 - 0.4 Первичный анализ** |  | 17.5d? | 2024-09-02 | 2024-09-25 |  | 0d |  |  | 115.63h | 0.5 |
| 13 | 2.1.1 | Анализ ФТ/Бизнес-постановки/БТ |  | 3d? | 2024-09-02 | 2024-09-05 | 3 | 0d |  | Методолог1 | 24.03h | 0.5 |
| 14 | 2.1.2 | Фиксация финальной версии US |  | 2d? | 2024-09-05 | 2024-09-09 | 13 | 0d |  | Методолог1 | 16h | 0.5 |
| 15 | 2.1.3 | Разработка БП |  | 8.33d? | 2024-09-09 | 2024-09-19 | 14 | 0d |  | Методолог1 [60%] | 40h | 0.5 |
| 16 | 2.1.4 | Выявление и фиксация БПР и БТ. Построение первичных DOM |  | 8d | 2024-09-09 | 2024-09-19 | 15SS | 103.89d |  | Методолог1 [40%] | 25.6h | 0.5 |
| 17 | 2.1.5 | Согласование и бейзлайн БП |  | 4.17d? | 2024-09-19 | 2024-09-25 | 15 | 0d |  | Методолог1 [30%] | 10h | 0.5 |
| 18 | 2.2 | **0.5 - Прототип для согласования с ПО** |  | 14.64d? | 2024-09-23 | 2024-10-14 |  | 0d |  |  | 80h | 0.5 |
| 19 | 2.2.1 | Разработка Концепции реализации и UCM на уровне целей и КМД |  | 7.5d? | 2024-09-23 | 2024-10-03 | 17FS-2d | 0d |  | Методолог1 [40%] | 24h | 0.5 |
| 20 | 2.2.2 | Уточнение и финализация БП |  | 6.67d | 2024-09-23 | 2024-10-02 | 19SS | 94.73d |  | Методолог1 [30%] | 16h | 0.5 |
| 21 | 2.2.3 | Создание Прототипа |  | 7.14d? | 2024-10-03 | 2024-10-14 | 19, 17 | 0d |  | Методолог1 [70%] | 40h | 0.5 |
| 22 | 2.3 | **0.6 Прототип с отработкой замечаний ПО и показ ФЗ** |  | 20d? | 2024-10-14 | 2024-11-11 |  | 0d |  |  | 48h | 0.5 |
| 23 | 2.3.1 | Согласование и бейзлайн концепции реализации, UCM на уровне сценариев, ЛМД |  | 10d? | 2024-10-14 | 2024-10-28 | 21 | 0d |  | Методолог1 [30%] | 24h | 0.5 |
| 24 | 2.3.2 | Согласование и финализация прототипа |  | 10d? | 2024-10-28 | 2024-11-11 | 23 | 0d |  | Методолог1 [30%] | 24h | 0.5 |

Notes:
- 3: Комментарий: МД 1.0 = емкость ~2000 (1 год)
- 4: Комментарий: МПМ 1.0 = емкость 3400 + 1000 быстрый прототип (2 года)
- 5: Комментарий: МАП 1.0 = емкость 3500 ч (длит. 1,5 года)
- 12: Комментарий: 10%
- 13: Комментарий: В жире мы ведем версию с "управленческими" и "функциональными" Epic в рамках выпуска Версии "Функциональнй" Epic = фича (FR/EN).
- 14: Комментарий: "Управленческий" Epic = работы которые никак нельзя привязать в конкретную фичу. Например разработка общей концепции реализа или создание DOM.
- 15: Комментарий: FR: настройка метарегламента например разбивается на 3 фичи: показ списка, работа с фильтрами, предпросмотр, политика по объектам и политика по субъектам.
- 16: Комментарий: Управленческие Эпики должны называться также как пункты плана и по сути в Жире они декомпозируются
- 22: Комментарий: Тут могут быть несколько промежуточных версий между 0,6 и 0.9 как было в МПМ

| ID | WBS | Task | Type | Duration | Start | Finish | Predecessors | Total slack | Free slack | Resources | Work | Комментарий | Версия |
| --- | --- | --- | --- | --- | --- | --- | --- | --- | --- | --- | --- | --- | --- |
| 25 | 2.4 | **0.9 ФГ Основные ЭФ и Шаблоны ПФ** |  | 22d? | 2024-11-11 | 2024-12-11 |  | 0d |  |  | 244h | 20% (итого 30%) | 0.9 |
| 26 | 2.4.1 | Настройка каркаса |  | 2d? | 2024-11-11 | 2024-11-13 | 24 | 0d |  | Методолог1 | 16h |  | 0.9 |
| 27 | 2.4.2 | Реализация ОСНОВНЫХ ЭФ |  | 10d | 2024-11-13 | 2024-11-27 | 26 | 0d |  | Методолог1 | 80h | 10 дней | 0.9 |
| 28 | 2.4.3 | Разработка Шаблонов ПФ |  | 10d | 2024-11-27 | 2024-12-11 | 27 | 38.75d | 15.94d | Методолог1, Методолог2 | 80h | 10 дней | 0.9 |
| 29 | 2.4.4 | РВИ и ЛМД |  | 5d | 2024-11-18 | 2024-11-25 | 27SS+3d | 32.58d | 0d | Аналитик1 [70%] | 28h | 5 дней | 0.9 |
| 30 | 2.4.5 | Демо и финализация каркаса |  | 5d? | 2024-11-27 | 2024-12-04 | 27 | 0d |  | Методолог1 | 40h |  | 0.9 |
| 31 | 2.5 | Старт финализации разработки версии | milestone | 0d | 2024-12-04 | 2024-12-04 | 30 | 0d |  |  |  |  | 0.9 |
| 32 | 2.6 | **0.9.1 Совместное тестирование ГЛАВНЫХ БП, ЭФ и ПФ** |  | 20.94d? | 2024-12-04 | 2025-01-02 |  | 0d |  |  | 335h |  | 0.9.1 |
| 33 | 2.6.1 | Реализация ГЛАВНЫХ ЭФ и части ПФ паралельно |  | 18.75d? | 2024-12-04 | 2024-12-30 | 31 | 0d |  | Методолог1; Методолог2 | 300h | = 30% * WE (итого 60%) | 0.9.1 |
| 34 | 2.6.2 | Реализация обработчиков |  | 2.19d? | 2024-12-30 | 2025-01-02 | 33 | 22.81d | 0d | Методолог1; Методолог2 | 35h | = 15% * 30%*WE | 0.9.1 |
| 35 | 2.7 | **0.9.2 Подготовка версии для ОЭ** |  | 33.5d? | 2024-12-04 | 2025-01-20 |  | 0d |  |  | 632h |  | 0.9.2 |
| 36 | 2.7.1 | Реализация всех ЭФ паралельно |  | 25d? | 2024-12-04 | 2025-01-08 | 33SS | 0d |  | Методолог3; Методолог4 | 400h | = 40% * WE (итого 100%) !!! МБ ПАРАЛЕЛЬ!!! | 0.9.2 |
| 37 | 2.7.2 | Реализация обработчиков |  | 3.5d? | 2025-01-08 | 2025-01-13 | 36 | 0d |  | Методолог3; Методолог4 | 56h | = 15% * 50% * WE | 0.9.2 |
| 38 | 2.7.3 | Реализация ПФ паралельно |  | 6d | 2025-01-02 | 2025-01-10 | 34, 28 | 22.81d |  | Методолог1; Методолог2 | 96h | 3 дня / форму !!! МБ ПАРАЛЛЕЛЬ !!! | 0.9.2 |
| 39 | 2.7.4 | Релизные тесты |  | 3d? | 2025-01-13 | 2025-01-16 | 37 | 0d |  | Методолог1; Методолог2 | 48h |  | 0.9.2 |
| 40 | 2.7.5 | Регресс тесты |  | 2d? | 2025-01-16 | 2025-01-20 | 39 | 0d |  | Методолог1; Методолог2 | 32h |  | 0.9.2 |
| 41 | 2.8 | **1.0 Подготовка версии для ОПЭ** |  | 16.25d? | 2025-01-20 | 2025-02-11 |  | 0d |  |  | 228h |  | 1.0 |
| 42 | 2.8.1 | Стабилизация |  | 6.25d? | 2025-01-20 | 2025-01-28 | 40 | 0d |  | Методолог1; Методолог2 | 100h | = 10% * WE | 1.0 |
| 43 | 2.8.2 | Релизные тесты |  | 3d | 2025-01-28 | 2025-01-31 | 42 | 0d |  | Методолог1; Методолог2 | 48h |  | 1.0 |
| 44 | 2.8.3 | Регресс тесты |  | 1d | 2025-01-31 | 2025-02-03 | 43 | 0d |  | Методолог1 | 8h |  | 1.0 |
| 45 | 2.8.4 | Развертывание |  | 3d | 2025-02-03 | 2025-02-06 | 44 | 0d |  | Методолог1 | 24h |  | 1.0 |
| 46 | 2.8.5 | Релизные тесты |  | 2d | 2025-02-06 | 2025-02-10 | 45 | 0d |  | Методолог2; Методолог1 | 32h |  | 1.0 |
| 47 | 2.8.6 | Регресс тесты |  | 1d | 2025-02-10 | 2025-02-11 | 46 | 0d |  | Методолог1; Методолог2 | 16h |  | 1.0 |
| 48 | 2.8.7 | Выпуск | milestone | 0d | 2025-02-11 | 2025-02-11 | 47 | 0d |  |  |  |  | 1.0 |

| ID | WBS | Task | Duration | Start | Finish | Predecessors | Total slack | Free slack | Resources | Work | Комментарий |
| --- | --- | --- | --- | --- | --- | --- | --- | --- | --- | --- | --- |
| 49 | 3 | **Разработка сервисов и кастомизация СИЭР** | 54d? | 2024-11-21 | 2025-02-05 |  | 4.75d |  |  | 522h |  |
| 50 | 3.1 | **Разработка 1 итерация каркасная** | 13.17d? | 2024-11-21 | 2024-12-10 |  | 32.58d |  |  | 122h |  |
| 51 | 3.1.1 | Разработка ПЗ по бэку | 4.17d? | 2024-11-21 | 2024-11-27 | 29SS+3d | 32.58d | 0d | Аналитик1 [30%] | 10h |  |
| 52 | 3.1.2 | Реализация бэк методов | 5d? | 2024-11-27 | 2024-12-04 | 51 | 49.58d |  | Разработчик1 | 40h |  |
| 53 | 3.1.3 | Разработка ПЗ по фронту | 2d? | 2024-11-27 | 2024-11-29 | 51 | 32.58d | 0d | Аналитик1 | 16h |  |
| 54 | 3.1.4 | Разрабокта фронта | 7d? | 2024-11-29 | 2024-12-10 | 53 | 45.58d |  | Фронт-разработчик1 | 56h |  |
| 55 | 3.2 | **Разработка 2 итерация Счастливый путь** | 20d? | 2024-12-30 | 2025-01-27 |  | 11d |  |  | 220h |  |
| 56 | 3.2.1 | Финальные уточнения ПЗ по бэку | 5d? | 2024-12-30 | 2025-01-06 | 33, 53 | 11d | 0d | Аналитик1 | 40h | 5 д |
| 57 | 3.2.2 | Реализация бэк методов | 7.5d? | 2025-01-06 | 2025-01-16 | 56 | 18.5d |  | Разработчик1 | 60h | 60 ч |
| 58 | 3.2.3 | Финальные уточнения ПЗ по фронту | 5d | 2025-01-06 | 2025-01-13 | 56 | 11d | 0d | Аналитик1 | 40h | 5 д |
| 59 | 3.2.4 | Разрабокта фронта | 10d? | 2025-01-13 | 2025-01-27 | 58 | 11d |  | Фронт-разработчик1 | 80h | 80 ч |
| 60 | 3.3 | **Разработка 3 итерация ИНТЕГРАЦИИ и Полный путь** | 10.5d? | 2025-01-16 | 2025-01-31 |  | 4.75d | 0d |  | 124h |  |
| 61 | 3.3.1 | Совместные тестирования и уточнения ПЗ по бэку | 5d | 2025-01-16 | 2025-01-23 | 39 | 4.75d | 0d | Аналитик1 | 40h | 5 дней |
| 62 | 3.3.2 | Реализация бэк методов | 5d? | 2025-01-23 | 2025-01-30 | 61 | 5.25d |  | Разработчик1 | 40h |  |
| 63 | 3.3.3 | Тесты и финальные уточнения ПЗ по фронту | 3d | 2025-01-23 | 2025-01-28 | 61 | 4.75d | 0d | Аналитик1 | 24h | 3 дня |
| 64 | 3.3.4 | Финализация фронта | 2.5d? | 2025-01-28 | 2025-01-31 | 63 | 4.75d |  | Фронт-разработчик1 | 20h |  |
| 65 | 3.4 | **Разработка ФИНАЛИЗАЦИЯ и СОПРОВОЖДЕНИЕ** | 3d? | 2025-01-31 | 2025-02-05 | 60 | 4.75d |  |  | 56h |  |
| 66 | 3.4.1 | Тесты и Уточнения ПЗ по бэку | 3d | 2025-01-31 | 2025-02-05 |  | 4.75d |  | Аналитик1 [50%] | 12h |  |
| 67 | 3.4.2 | Стабилизация бэк методов | 2.5d? | 2025-01-31 | 2025-02-04 |  | 5.25d |  | Разработчик1 | 20h |  |
| 68 | 3.4.3 | Тесты и Уточнения ПЗ по фронту | 1d | 2025-01-31 | 2025-02-03 |  | 6.75d |  | Аналитик1 [50%] | 4h |  |
| 69 | 3.4.4 | Стабилизация фронта | 2.5d? | 2025-01-31 | 2025-02-04 |  | 5.25d |  | Фронт-разработчик1 | 20h |  |
