# ПроектСИЭР

Schedule from MS Project, 2024-09-02 to 2025-09-11.
DIT

## Calendars

- Стандартный: Mon-Fri 09:00-13:00, 14:00-18:00; Sat-Sun off.

## Resources

| Resource | Group |
| --- | --- |
| Методолог1 | Методологи |
| Разработчик1 | Разраб |
| Аналитик1 | Аналитики |
| Фронт-разработчик1 | Разраб |
| Методолог2 | Методологи |
| Методолог3 | Методологи |
| Аналитик2 | Аналитики |
| Разработчик2 | Разраб |
| Фронт-разработчик2 | Разраб |
| Аналитик3 | Аналитики |
| Разработчик3 | Разраб |
| Фронт-разработчик3 | Разраб |
| Методолог4 | Методологи |
| Методолог5 |  |
| Методолог6 |  |

## Schedule

| ID | WBS | Task | Type | Duration | Start | Finish | Predecessors | Total slack | Free slack | Constraint | Resources | Work |
| --- | --- | --- | --- | --- | --- | --- | --- | --- | --- | --- | --- | --- |
| 1 | 1 | **Проект1 Методолог** |  | 108.7d? | 2024-09-02 | 2025-01-30 |  | 0d |  |  |  | 883h |
| 2 | 1.1 | Старт | milestone | 0d | 2024-09-02 | 2024-09-02 |  | 0d |  | start no earlier than 2024-09-02 |  |  |
| 3 | 1.2 | Анализ ФТ |  | 2d? | 2024-09-02 | 2024-09-03 | 2 | 0d |  |  | Методолог1 | 16h |
| 4 | 1.3 | Фиксация финальной версии US |  | 2d? | 2024-09-04 | 2024-09-05 | 3 | 0d |  |  | Методолог1 | 16h |
| 5 | 1.4 | Разработка БП |  | 5d? | 2024-09-06 | 2024-09-12 | 4 | 0d |  |  | Методолог1 | 40h |
| 6 | 1.5 | Согласование и бейзлайн БП |  | 16.67d? | 2024-09-13 | 2024-10-07 | 5 | 203.04d |  |  | Методолог1 [30%] | 40h |
| 7 | 1.6 | Разработка Концепции реализации |  | 4.29d? | 2024-09-13 | 2024-09-19 | 5 | 0d |  |  | Методолог1 [70%] | 24h |
| 8 | 1.7 | Согласование и бейзлайн концепции реализации |  | 16.67d? | 2024-09-19 | 2024-10-11 | 7 | 0d |  |  | Методолог1 [30%] | 40h |
| 9 | 1.8 | Разработка ПЗ по бэку |  | 4d? | 2024-10-11 | 2024-10-17 | 8 | 0d |  |  | Методолог1 | 32h |
| 10 | 1.9 | Реализация бэк методов |  | 5d? | 2024-10-17 | 2024-10-24 | 9 | 189.75d |  |  | Разработчик1 | 40h |
| 11 | 1.10 | Разработка ПЗ по фронту |  | 10d? | 2024-10-17 | 2024-10-31 | 9 | 0d |  |  | Методолог1 | 80h |
| 12 | 1.11 | Разрабокта фронта |  | 7d? | 2024-10-31 | 2024-11-11 | 11 | 177.75d |  |  | Фронт-разработчик1 | 56h |
| 13 | 1.12 | РВИ и ЛМД |  | 10d? | 2024-10-31 | 2024-11-14 | 11 | 174.75d |  |  | Методолог1 [60%] | 48h |
| 14 | 1.13 | Настройка каркаса |  | 15d? | 2024-10-31 | 2024-11-21 | 11 | 0d |  |  | Методолог1 [40%] | 48h |
| 15 | 1.14 | Демо и финализация каркаса |  | 10d? | 2024-11-21 | 2024-12-05 | 14 | 0d |  |  | Методолог1 [50%] | 40h |
| 16 | 1.15 | Реализация ЭФ паралельно |  | 9.38d? | 2024-11-22 | 2024-12-05 | 15FF | 0d |  |  | Методолог1 [20%] | 15h |
| 17 | 1.16 | Реализация всех ЭФ |  | 12.5d? | 2024-12-05 | 2024-12-24 | 16 | 0d |  |  | Методолог1 [60%] | 60h |
| 18 | 1.17 | Реализация ПФ паралельно |  | 12.5d? | 2024-12-05 | 2024-12-24 | 17FF | 0d |  |  | Методолог1 [20%] | 20h |
| 19 | 1.18 | Реализация ПФ |  | 6.25d? | 2024-12-24 | 2025-01-01 | 18 | 0d |  |  | Методолог1 | 50h |
| 20 | 1.19 | Реализация обработчиков |  | 12.5d? | 2024-12-05 | 2024-12-24 | 16 | 147.25d | 0d |  | Методолог1 [10%] | 10h |
| 21 | 1.20 | Реализация обработчиков |  | 5d? | 2024-12-17 | 2024-12-24 | 20FF | 147.25d |  |  | Фронт-разработчик1 | 40h |
| 22 | 1.21 | Релизные тесты |  | 3d? | 2025-01-01 | 2025-01-06 | 19 | 0d |  |  | Методолог1 | 24h |
| 23 | 1.22 | Стабилизация |  | 5d? | 2025-01-06 | 2025-01-13 | 22 | 0d |  |  | Методолог1 | 40h |
| 24 | 1.23 | Релизные тесты |  | 2d? | 2025-01-13 | 2025-01-15 | 23 | 0d |  |  | Методолог1 | 16h |
| 25 | 1.24 | Регресс тесты |  | 2d? | 2025-01-15 | 2025-01-17 | 24 | 0d |  |  | Методолог1 | 16h |
| 26 | 1.25 | Развертывание |  | 4d? | 2025-01-17 | 2025-01-23 | 25 | 0d |  |  | Методолог1 | 32h |
| 27 | 1.26 | Релизные тесты |  | 3d? | 2025-01-23 | 2025-01-28 | 26 | 0d |  |  | Методолог1 | 24h |
| 28 | 1.27 | Регресс тесты |  | 2d? | 2025-01-28 | 2025-01-30 | 27 | 0d |  |  | Методолог1 | 16h |

| ID | WBS | Task | Type | Duration | Start | Finish | Predecessors | Total slack | Free slack | Constraint | Resources | Work |
| --- | --- | --- | --- | --- | --- | --- | --- | --- | --- | --- | --- | --- |
| 29 | 2 | **Проект1 Методолог + 1 Аналитик** |  | 95.71d? | 2024-09-02 | 2025-01-13 |  | 173d |  |  |  | 915h |
| 30 | 2.1 | Старт | milestone | 0d | 2024-09-02 | 2024-09-02 |  | 133d | 0d | start no earlier than 2024-09-02 |  |  |
| 31 | 2.2 | Анализ ФТ |  | 3d? | 2024-09-02 | 2024-09-05 | 30 | 133d | 0d |  | Методолог2 | 16h |
| 32 | 2.3 | Фиксация финальной версии US |  | 2d? | 2024-09-05 | 2024-09-09 | 31 | 133d | 0d |  | Методолог2 | 16h |
| 33 | 2.4 | Разработка БП |  | 5d? | 2024-09-09 | 2024-09-16 | 32 | 133d | 0d |  | Методолог2 | 40h |
| 34 | 2.5 | Согласование и бейзлайн БП |  | 16.67d? | 2024-09-16 | 2024-10-08 | 33 | 202.03d |  |  | Методолог2 [30%] | 40h |
| 35 | 2.6 | Разработка Концепции реализации |  | 4.29d? | 2024-09-16 | 2024-09-20 | 33 | 133d | 0d |  | Методолог2 [70%] | 24h |
| 36 | 2.7 | Согласование и бейзлайн концепции реализации |  | 16.67d? | 2024-09-20 | 2024-10-14 | 35 | 133d | 0d |  | Методолог2 [30%] | 40h |
| 37 | 2.8 | Разработка ПЗ по бэку |  | 4d? | 2024-09-20 | 2024-09-26 | 35 | 190.41d | 0d |  | Аналитик2 | 32h |
| 38 | 2.9 | Реализация бэк методов |  | 5d? | 2024-09-26 | 2024-10-03 | 37 | 205.41d |  |  | Разработчик2 | 40h |
| 39 | 2.10 | Разработка ПЗ по фронту |  | 10d? | 2024-09-26 | 2024-10-10 | 37 | 190.41d | 0d |  | Аналитик2 | 80h |
| 40 | 2.11 | Разрабокта фронта |  | 7d? | 2024-10-10 | 2024-10-21 | 39 | 193.41d |  |  | Фронт-разработчик2 | 56h |
| 41 | 2.12 | РВИ и ЛМД |  | 10d? | 2024-10-10 | 2024-10-24 | 39 | 190.41d |  |  | Аналитик2 | 80h |
| 42 | 2.13 | Настройка каркаса |  | 15d? | 2024-10-14 | 2024-11-04 | 36 | 133d | 0d |  | Методолог2 [40%] | 48h |
| 43 | 2.14 | Демо и финализация каркаса |  | 10d? | 2024-11-04 | 2024-11-18 | 42 | 133d | 0d |  | Методолог2 [50%] | 40h |
| 44 | 2.15 | Реализация ЭФ паралельно |  | 9.38d? | 2024-11-05 | 2024-11-18 | 43FF | 133d | 0d |  | Методолог2 [20%] | 15h |
| 45 | 2.16 | Реализация всех ЭФ |  | 12.5d? | 2024-11-18 | 2024-12-05 | 44 | 133d | 0d |  | Методолог2 [60%] | 60h |
| 46 | 2.17 | Реализация ПФ паралельно |  | 12.5d? | 2024-11-18 | 2024-12-05 | 45FF | 133d | 0d |  | Методолог2 [20%] | 20h |
| 47 | 2.18 | Реализация ПФ |  | 6.25d? | 2024-12-05 | 2024-12-13 | 46 | 133d | 0d |  | Методолог2 | 50h |
| 48 | 2.19 | Реализация обработчиков |  | 12.5d? | 2024-11-18 | 2024-12-05 | 44 | 160.25d | 0d |  | Методолог2 [10%] | 10h |
| 49 | 2.20 | Реализация обработчиков |  | 5d? | 2024-11-28 | 2024-12-05 | 48FF | 160.25d |  |  | Фронт-разработчик2 | 40h |
| 50 | 2.21 | Релизные тесты |  | 3d? | 2024-12-13 | 2024-12-18 | 47 | 133d | 0d |  | Методолог2 | 24h |
| 51 | 2.22 | Стабилизация |  | 5d? | 2024-12-18 | 2024-12-25 | 50 | 133d | 0d |  | Методолог2 | 40h |
| 52 | 2.23 | Релизные тесты |  | 2d? | 2024-12-25 | 2024-12-27 | 51 | 133d | 0d |  | Методолог2 | 16h |
| 53 | 2.24 | Регресс тесты |  | 2d? | 2024-12-27 | 2024-12-31 | 52 | 133d | 0d |  | Методолог2 | 16h |
| 54 | 2.25 | Развертывание |  | 4d? | 2024-12-31 | 2025-01-06 | 53 | 133d | 0d |  | Методолог2 | 32h |
| 55 | 2.26 | Релизные тесты |  | 3d? | 2025-01-06 | 2025-01-09 | 54 | 133d | 0d |  | Методолог2 | 24h |
| 56 | 2.27 | Регресс тесты |  | 2d? | 2025-01-09 | 2025-01-13 | 55 | 133d |  |  | Методолог2 | 16h |

| ID | WBS | Task | Type | Duration | Start | Finish | Predecessors | Total slack | Free slack | Constraint | Resources | Work |
| --- | --- | --- | --- | --- | --- | --- | --- | --- | --- | --- | --- | --- |
| 57 | 3 | **Проект1 параллельно 2 методолога + 1 Аналитик** |  | 76.47d? | 2024-09-02 | 2024-12-17 |  | 192.23d |  |  |  | 1171.03h |
| 58 | 3.1 | Старт | milestone | 0d | 2024-09-02 | 2024-09-02 |  | 192.23d | 0d | start no earlier than 2024-09-02 |  |  |
| 59 | 3.2 | Анализ ФТ |  | 3d? | 2024-09-02 | 2024-09-05 | 58 | 192.23d | 0d |  | Методолог3 | 24.03h |
| 60 | 3.3 | Фиксация финальной версии US |  | 2d? | 2024-09-05 | 2024-09-09 | 59 | 192.23d | 0d |  | Методолог3 | 16h |
| 61 | 3.4 | Разработка БП |  | 5d? | 2024-09-09 | 2024-09-16 | 60 | 192.23d | 0d |  | Методолог3 | 40h |
| 62 | 3.5 | Согласование и бейзлайн БП |  | 16.67d? | 2024-09-16 | 2024-10-08 | 61 | 242.03d |  |  | Методолог3 [30%] | 40h |
| 63 | 3.6 | Разработка Концепции реализации |  | 4.29d? | 2024-09-16 | 2024-09-20 | 61 | 192.23d | 0d |  | Методолог3 [70%] | 24h |
| 64 | 3.7 | Согласование и бейзлайн концепции реализации |  | 16.67d? | 2024-09-20 | 2024-10-14 | 63 | 192.23d | 0d |  | Методолог3 [30%] | 40h |
| 65 | 3.8 | Разработка ПЗ по бэку |  | 4d? | 2024-09-20 | 2024-09-26 | 63 | 230.41d | 0d |  | Аналитик3 | 32h |
| 66 | 3.9 | Реализация бэк методов |  | 5d? | 2024-09-26 | 2024-10-03 | 65 | 245.41d |  |  | Разработчик3 | 40h |
| 67 | 3.10 | Разработка ПЗ по фронту |  | 10d? | 2024-09-26 | 2024-10-10 | 65 | 230.41d | 0d |  | Аналитик3 | 80h |
| 68 | 3.11 | Разрабокта фронта |  | 7d? | 2024-10-10 | 2024-10-21 | 67 | 233.41d |  |  | Фронт-разработчик3 | 56h |
| 69 | 3.12 | РВИ и ЛМД |  | 10d? | 2024-10-10 | 2024-10-24 | 67 | 230.41d |  |  | Аналитик3 | 80h |
| 70 | 3.13 | Настройка каркаса |  | 21.43d? | 2024-09-20 | 2024-10-21 | 64SS | 192.23d | 0d |  | Методолог4 [70%] | 120h |
| 71 | 3.14 | Демо и финализация каркаса |  | 5d? | 2024-10-21 | 2024-10-28 | 70 | 192.23d | 0d |  | Методолог4 | 40h |
| 72 | 3.15 | Реализация ЭФ паралельно |  | 6.25d? | 2024-09-20 | 2024-09-30 | 70SS | 212.41d | 10.42d |  | Методолог4 [30%] | 15h |
| 73 | 3.16 | Реализация всех ЭФ |  | 7.5d? | 2024-10-14 | 2024-10-24 | 72, 64 | 202d | 0d |  | Методолог3 | 60h |
| 74 | 3.17 | Реализация ПФ паралельно |  | 12.5d? | 2024-10-28 | 2024-11-14 | 73SS, 71 | 192.23d | 0d |  | Методолог4 | 100h |
| 75 | 3.18 | Реализация ПФ |  | 6.25d? | 2024-11-14 | 2024-11-22 | 74 | 192.23d | 0d |  | Методолог4 | 50h |
| 76 | 3.19 | Реализация обработчиков |  | 1.25d? | 2024-10-24 | 2024-10-25 | 72, 73 | 229d |  |  | Методолог3 | 10h |
| 77 | 3.20 | Реализация обработчиков |  | 5d? | 2024-10-24 | 2024-10-31 | 73 | 225.25d |  |  | Фронт-разработчик3 | 40h |
| 78 | 3.21 | Релизные тесты |  | 3d? | 2024-11-22 | 2024-11-27 | 75 | 192.23d | 0d |  | Методолог3; Методолог4 | 48h |
| 79 | 3.22 | Стабилизация |  | 5d? | 2024-11-27 | 2024-12-04 | 78 | 192.23d | 0d |  | Методолог3; Методолог4 | 80h |
| 80 | 3.23 | Релизные тесты |  | 2d? | 2024-12-04 | 2024-12-06 | 79 | 192.23d | 0d |  | Методолог4 | 16h |
| 81 | 3.24 | Регресс тесты |  | 2d? | 2024-12-04 | 2024-12-06 | 80SS | 192.23d | 0d |  | Методолог3 | 16h |
| 82 | 3.25 | Развертывание |  | 4d? | 2024-12-06 | 2024-12-12 | 81 | 192.23d | 0d |  | Методолог3; Методолог4 | 64h |
| 83 | 3.26 | Релизные тесты |  | 3d? | 2024-12-12 | 2024-12-17 | 82 | 192.23d | 0d |  | Методолог4 | 24h |
| 84 | 3.27 | Регресс тесты |  | 2d? | 2024-12-12 | 2024-12-16 | 83SS | 193.23d | 0d |  | Методолог3 | 16h |
| 85 | 3.28 | Выпуск | milestone | 0d | 2024-12-16 | 2024-12-16 | 84 | 193.23d |  |  |  |  |

| ID | WBS | Task | Type | Duration | Start | Finish | Predecessors | Total slack | Free slack | Resources | Work |
| --- | --- | --- | --- | --- | --- | --- | --- | --- | --- | --- | --- |
| 87 | 4 | **Перекрытие** |  | 160d? | 2025-01-30 | 2025-09-11 |  | 0d |  |  | 8640h |
| 88 | 4.1 | **1 группа (5 чк)** |  | 80d? | 2025-01-30 | 2025-05-22 |  | 0d |  |  | 2160h |
| 89 | 4.1.1 | старт | milestone | 0d | 2025-01-30 | 2025-01-30 | 28 | 0d |  |  |  |
| 90 | 4.1.2 | М |  | 40d? | 2025-01-30 | 2025-03-27 | 89 | 50d | 0d | Методолог1; Методолог2 | 640h |
| 91 | 4.1.3 | А |  | 40d? | 2025-01-30 | 2025-03-27 | 89 | 0d |  | Аналитик1 | 320h |
| 92 | 4.1.4 | М |  | 40d? | 2025-03-27 | 2025-05-22 | 91 | 0d |  | Методолог1; Методолог2 | 640h |
| 93 | 4.1.5 | Р |  | 40d? | 2025-01-30 | 2025-03-27 | 89 | 80d |  | Разработчик1 | 320h |
| 94 | 4.1.6 | ФР |  | 30d? | 2025-03-27 | 2025-05-08 | 90 | 50d |  | Фронт-разработчик1 | 240h |
| 95 | 4.2 | **2 группа (5 чк)** |  | 80d? | 2025-01-30 | 2025-05-22 |  | 40d |  |  | 2160h |
| 96 | 4.2.1 | старт | milestone | 0d | 2025-01-30 | 2025-01-30 | 28 | 40d | 0d |  |  |
| 97 | 4.2.2 | М |  | 40d? | 2025-01-30 | 2025-03-27 | 96 | 50d | 0d | Методолог3; Методолог4 | 640h |
| 98 | 4.2.3 | А |  | 40d? | 2025-01-30 | 2025-03-27 | 96 | 40d | 0d | Аналитик2 | 320h |
| 99 | 4.2.4 | М |  | 40d? | 2025-03-27 | 2025-05-22 | 98 | 40d |  | Методолог3; Методолог4 | 640h |
| 100 | 4.2.5 | Р |  | 40d? | 2025-01-30 | 2025-03-27 | 96 | 40d | 0d | Разработчик2 | 320h |
| 101 | 4.2.6 | ФР |  | 30d? | 2025-03-27 | 2025-05-08 | 97 | 50d |  | Фронт-разработчик2 | 240h |
| 102 | 4.3 | **3 группа (5 чк)** |  | 120d? | 2025-01-30 | 2025-07-17 |  | 40d |  |  | 2160h |
| 103 | 4.3.1 | старт | milestone | 0d | 2025-01-30 | 2025-01-30 | 28 | 80d | 0d |  |  |
| 104 | 4.3.2 | М |  | 40d? | 2025-01-30 | 2025-03-27 | 103 | 90d | 30d | Методолог5; Методолог6 | 640h |
| 105 | 4.3.3 | А |  | 40d? | 2025-03-27 | 2025-05-22 | 103, 98 | 40d | 0d | Аналитик2 | 320h |
| 106 | 4.3.4 | М |  | 40d? | 2025-05-22 | 2025-07-17 | 105 | 40d |  | Методолог5; Методолог6 | 640h |
| 107 | 4.3.5 | Р |  | 40d? | 2025-03-27 | 2025-05-22 | 103, 100 | 80d |  | Разработчик2 | 320h |
| 108 | 4.3.6 | ФР |  | 30d? | 2025-05-08 | 2025-06-19 | 104, 101 | 60d |  | Фронт-разработчик2 | 240h |
| 109 | 4.4 | **4 группа (5 чк)** |  | 80d? | 2025-05-22 | 2025-09-11 |  | 0d |  |  | 2160h |
| 110 | 4.4.1 | старт | milestone | 0d | 2025-05-22 | 2025-05-22 | 92 | 40d | 0d |  |  |
| 111 | 4.4.2 | М |  | 40d? | 2025-05-22 | 2025-07-17 | 92 | 10d | 0d | Методолог1; Методолог2 | 640h |
| 112 | 4.4.3 | А |  | 40d? | 2025-05-22 | 2025-07-17 | 92 | 0d |  | Аналитик1 | 320h |
| 113 | 4.4.4 | М |  | 40d? | 2025-07-17 | 2025-09-11 | 112 | 0d |  | Методолог1; Методолог2 | 640h |
| 114 | 4.4.5 | Р |  | 40d? | 2025-05-22 | 2025-07-17 | 110, 100 | 40d |  | Разработчик2 | 320h |
| 115 | 4.4.6 | ФР |  | 30d? | 2025-07-17 | 2025-08-28 | 111, 101 | 10d |  | Фронт-разработчик1 | 240h |
