# ПроектСИЭР v.0.2

Schedule from MS Project, 2024-09-02 to 2025-02-26.
DIT

## Calendars

- Стандартный: Mon-Fri 09:00-13:00, 14:00-18:00; Sat-Sun off.

## Resources

| Resource | Group |
| --- | --- |
| Методолог1 | Методологи |
| Разработчик1 | Разраб |
| Аналитик1 | Аналитики |
| Фронт-разработчик1 | Разраб |
| Методолог2 | Методологи |
| Методолог3 | Методологи |
| Аналитик2 | Аналитики |
| Разработчик2 | Разраб |
| Фронт-разработчик2 | Разраб |
| Аналитик3 | Аналитики |
| Разработчик3 | Разраб |
| Фронт-разработчик3 | Разраб |
| Методолог4 | Методологи |
| Методолог5 |  |
| Методолог6 |  |

## Schedule

| ID | WBS | Task | Type | Duration | Start | Finish | Predecessors | Total slack | Free slack | Constraint | Resources | Work |
| --- | --- | --- | --- | --- | --- | --- | --- | --- | --- | --- | --- | --- |
| 1 | 1 | **Типовой шаблон СИЭР (средний модуль)** |  | 127.28d? | 2024-09-02 | 2025-02-26 |  | 0d |  |  |  | 1796.03h |
| 2 | 1.1 | **Вехи** |  | 127.28d | 2024-09-02 | 2025-02-26 |  | 0d |  |  |  |  |
| 3 | 1.1.1 | Старт | milestone | 0d | 2024-09-02 | 2024-09-02 |  | 0d |  | start no earlier than 2024-09-02 |  |  |
| 4 | 1.1.2 | 0.5 - Прототип для согласования с ПО | milestone | 0d | 2024-10-08 | 2024-10-08 | 10 | 100.61d |  |  |  |  |
| 5 | 1.1.3 | 0.6 Прототип с отработкой замечаний ПО и показ ФЗ | milestone | 0d | 2024-11-07 | 2024-11-07 | 17 | 79.18d |  |  |  |  |
| 6 | 1.1.4 | 0.9 ФГ | milestone | 0d | 2024-12-13 | 2024-12-13 | 20 | 52.75d |  |  |  |  |
| 7 | 1.1.5 | 0.9.1 Совместное тестирование всех ЭФ и БП | milestone | 0d | 2025-01-03 | 2025-01-03 | 39 | 37.75d |  |  |  |  |
| 8 | 1.1.6 | 0.9.2 ОЭ | milestone | 0d | 2025-02-07 | 2025-02-07 | 50 | 12.75d |  |  |  |  |
| 9 | 1.1.7 | 1.0 ОПЭ | milestone | 0d | 2025-02-26 | 2025-02-26 | 31 | 0d |  |  |  |  |
| 10 | 1.2 | **0.5 - Прототип для согласования с ПО** |  | 26.67d? | 2024-09-02 | 2024-10-08 |  | 0d |  |  |  | 184.03h |
| 11 | 1.2.1 | Анализ ФТ |  | 3d? | 2024-09-02 | 2024-09-05 | 3 | 0d |  |  | Методолог1 | 24.03h |
| 12 | 1.2.2 | Фиксация финальной версии US |  | 2d? | 2024-09-05 | 2024-09-09 | 11 | 0d |  |  | Методолог1 | 16h |
| 13 | 1.2.3 | Разработка БП |  | 5d? | 2024-09-09 | 2024-09-16 | 12 | 0d |  |  | Методолог1 | 40h |
| 14 | 1.2.4 | Согласование и бейзлайн БП |  | 16.67d? | 2024-09-16 | 2024-10-08 | 13 | 100.61d |  |  | Методолог1 [30%] | 40h |
| 15 | 1.2.5 | Разработка Концепции реализации |  | 4.29d? | 2024-09-16 | 2024-09-20 | 13 | 0d |  |  | Методолог1 [70%] | 24h |
| 16 | 1.2.6 | Создание Прототипа |  | 7.14d? | 2024-09-20 | 2024-10-01 | 15 | 0d |  |  | Методолог1 [70%] | 40h |
| 17 | 1.3 | **0.6 Прототип с отработкой замечаний ПО и показ ФЗ** |  | 26.67d? | 2024-10-01 | 2024-11-07 |  | 0d |  |  |  | 64h |
| 18 | 1.3.1 | Согласование и бейзлайн концепции реализации |  | 16.67d? | 2024-10-01 | 2024-10-24 | 16 | 0d |  |  | Методолог1 [30%] | 40h |
| 19 | 1.3.2 | Согласование и финализация прототипа |  | 10d? | 2024-10-24 | 2024-11-07 | 18 | 0d |  |  | Методолог1 [30%] | 24h |
| 20 | 1.4 | **0.9 ФГ Основные ЭФ и Шаблоны ПФ** |  | 60.24d? | 2024-09-20 | 2024-12-13 |  | 21.9d | 0d |  |  | 496h |
| 21 | 1.4.1 | Настройка каркаса |  | 21.43d? | 2024-11-07 | 2024-12-06 | 18SS, 19 | 0d |  |  | Методолог1 [70%] | 120h |
| 22 | 1.4.2 | Реализация ОСНОВНЫХ ЭФ |  | 16.67d? | 2024-10-01 | 2024-10-24 | 18SS | 14.76d | 0d |  | Методолог2 [30%] | 40h |
| 23 | 1.4.3 | Разработка Шаблонов ПФ |  | 16.67d? | 2024-10-24 | 2024-11-15 | 22 | 14.76d |  |  | Методолог2 [30%] | 40h |
| 24 | 1.4.4 | Демо и финализация каркаса |  | 5d? | 2024-12-06 | 2024-12-13 | 21, 23 | 0d |  |  | Методолог1 | 40h |

| ID | WBS | Task | Type | Duration | Start | Finish | Predecessors | Total slack | Free slack | Resources | Work |
| --- | --- | --- | --- | --- | --- | --- | --- | --- | --- | --- | --- |
| 25 | 1.4.5 | **Разработка 1 итерация каркасная** |  | 17d? | 2024-09-20 | 2024-10-15 |  | 67.99d |  |  | 176h |
| 26 | 1.4.5.1 | Разработка ПЗ по бэку |  | 4d? | 2024-09-20 | 2024-09-26 | 15 | 67.99d | 0d | Аналитик1 | 32h |
| 27 | 1.4.5.2 | Реализация бэк методов |  | 5d? | 2024-09-26 | 2024-10-03 | 26 | 103.99d |  | Разработчик1 | 40h |
| 28 | 1.4.5.3 | Разработка ПЗ по фронту |  | 6d? | 2024-09-26 | 2024-10-04 | 26 | 67.99d | 0d | Аналитик1 | 48h |
| 29 | 1.4.5.4 | Разрабокта фронта |  | 7d? | 2024-10-04 | 2024-10-15 | 28 | 95.99d |  | Фронт-разработчик1 | 56h |
| 30 | 1.4.6 | РВИ и ЛМД |  | 10d? | 2024-10-04 | 2024-10-18 | 28 | 67.99d | 0d | Аналитик1 | 80h |
| 31 | 1.5 | **0.9.1 Подготовка релизной версии для ОПЭ** |  | 92.99d? | 2024-10-18 | 2025-02-26 |  | 0d |  |  | 1052h |
| 32 | 1.5.1 | **Разработка 2 итерация Счастливый путь** |  | 25d? | 2024-10-18 | 2024-11-22 | 30 | 67.99d |  |  | 260h |
| 33 | 1.5.1.1 | Финальные уточнения ПЗ по бэку |  | 5d? | 2024-10-18 | 2024-10-25 |  | 67.99d | 0d | Аналитик1 | 40h |
| 34 | 1.5.1.2 | Реализация бэк методов |  | 7.5d? | 2024-10-25 | 2024-11-05 | 33 | 80.49d |  | Разработчик1 | 60h |
| 35 | 1.5.1.3 | Финальные уточнения ПЗ по фронту |  | 10d? | 2024-10-25 | 2024-11-08 | 33 | 67.99d | 0d | Аналитик1 | 80h |
| 36 | 1.5.1.4 | Разрабокта фронта |  | 10d? | 2024-11-08 | 2024-11-22 | 35 | 67.99d |  | Фронт-разработчик1 | 80h |
| 37 | 1.5.2 | старт | milestone | 0d | 2024-12-13 | 2024-12-13 | 24 | 0d |  |  |  |
| 38 | 1.5.3 | Реализация всех ЭФ паралельно |  | 5d? | 2024-12-13 | 2024-12-20 | 37 | 47.75d |  | Методолог1 [60%] | 24h |
| 39 | 1.5.4 | Реализация обработчиков |  | 15d? | 2024-12-13 | 2025-01-03 | 37 | 37.75d | 0d | Методолог1 [20%] | 24h |
| 40 | 1.5.5 | Реализация ПФ паралельно |  | 35d? | 2024-12-13 | 2025-01-31 | 37 | 0d |  | Методолог1 [20%] | 56h |
| 41 | 1.5.6 | Реализация всех ЭФ паралельно |  | 5d? | 2024-12-13 | 2024-12-20 | 37 | 47.75d |  | Методолог2 [60%] | 24h |
| 42 | 1.5.7 | Реализация обработчиков |  | 15d? | 2024-12-13 | 2025-01-03 | 37 | 37.75d |  | Методолог2 [20%] | 24h |
| 43 | 1.5.8 | Реализация ПФ паралельно |  | 35d? | 2024-12-13 | 2025-01-31 | 37 | 17.75d |  | Методолог2 [20%] | 56h |
| 44 | 1.5.9 | **Разработка 3 итерация ФИНАЛИЗАЦИЯ** |  | 21d? | 2024-12-13 | 2025-01-13 | 37 | 31.75d |  |  | 208h |
| 45 | 1.5.9.1 | Совместные тестирования и уточнения ПЗ по бэку |  | 4d? | 2024-12-13 | 2024-12-19 | 30 | 31.75d | 0d | Аналитик1 | 32h |
| 46 | 1.5.9.2 | Реализация бэк методов |  | 5d? | 2024-12-19 | 2024-12-26 | 45 | 43.75d |  | Разработчик1 | 40h |
| 47 | 1.5.9.3 | Тесты и финальные уточнения ПЗ по фронту |  | 10d? | 2024-12-19 | 2025-01-02 | 45 | 31.75d | 0d | Аналитик1 | 80h |
| 48 | 1.5.9.4 | Финализация фронта |  | 7d? | 2025-01-02 | 2025-01-13 | 47 | 31.75d |  | Фронт-разработчик1 | 56h |
| 49 | 1.5.10 | Релизные тесты |  | 3d? | 2025-01-31 | 2025-02-05 | 40 | 0d |  | Методолог1; Методолог2 | 48h |
| 50 | 1.5.11 | Регресс тесты |  | 2d? | 2025-02-05 | 2025-02-07 | 49 | 0d |  | Методолог1; Методолог2 | 32h |

| ID | WBS | Task | Type | Duration | Start | Finish | Predecessors | Total slack | Free slack | Resources | Work |
| --- | --- | --- | --- | --- | --- | --- | --- | --- | --- | --- | --- |
| 51 | 1.5.12 | **Разработка СОПРОВОЖДЕНИЕ** |  | 5d? | 2025-02-05 | 2025-02-12 | 49 | 9.75d |  |  | 100h |
| 52 | 1.5.12.1 | Тесты и Уточнения ПЗ по бэку |  | 5d? | 2025-02-05 | 2025-02-12 |  | 9.75d |  | Аналитик1 [50%] | 20h |
| 53 | 1.5.12.2 | Стабилизация бэк методов |  | 2.5d? | 2025-02-05 | 2025-02-10 |  | 12.25d |  | Разработчик1 | 20h |
| 54 | 1.5.12.3 | Тесты и Уточнения ПЗ по фронту |  | 5d? | 2025-02-05 | 2025-02-12 |  | 9.75d |  | Аналитик1 [50%] | 20h |
| 55 | 1.5.12.4 | Стабилизация фронта |  | 5d? | 2025-02-05 | 2025-02-12 |  | 9.75d |  | Фронт-разработчик1 | 40h |
| 56 | 1.5.13 | Стабилизация |  | 3.75d? | 2025-02-07 | 2025-02-13 | 50 | 0d |  | Методолог1; Методолог2 | 60h |
| 57 | 1.5.14 | Релизные тесты |  | 2d? | 2025-02-13 | 2025-02-17 | 56 | 0d |  | Методолог2 | 16h |
| 58 | 1.5.15 | Регресс тесты |  | 2d? | 2025-02-13 | 2025-02-17 | 57SS | 0d |  | Методолог1 | 16h |
| 59 | 1.5.16 | Развертывание |  | 4d? | 2025-02-17 | 2025-02-21 | 58 | 0d |  | Методолог1; Методолог2 | 64h |
| 60 | 1.5.17 | Релизные тесты |  | 3d? | 2025-02-21 | 2025-02-26 | 59 | 0d |  | Методолог2 | 24h |
| 61 | 1.5.18 | Регресс тесты |  | 2d? | 2025-02-21 | 2025-02-25 | 60SS | 1d | 0d | Методолог1 | 16h |
| 62 | 1.5.19 | Выпуск | milestone | 0d | 2025-02-25 | 2025-02-25 | 61 | 1d |  |  |  |
