# ПроектСИЭР v.0.2

Schedule from MS Project, 2024-09-02 to 2025-03-28.
DIT

## Calendars

- Стандартный: Mon-Fri 09:00-13:00, 14:00-18:00; Sat-Sun off.

## Resources

| Resource | Group |
| --- | --- |
| Методолог1 | Методологи |
| Разработчик1 | Разраб |
| Аналитик1 | Аналитики |
| Фронт-разработчик1 | Разраб |
| Методолог2 | Методологи |
| Методолог3 | Методологи |
| Аналитик2 | Аналитики |
| Разработчик2 | Разраб |
| Фронт-разработчик2 | Разраб |
| Аналитик3 | Аналитики |
| Разработчик3 | Разраб |
| Фронт-разработчик3 | Разраб |
| Методолог4 | Методологи |
| Методолог5 |  |
| Методолог6 |  |
| Методолог1, Методолог2 |  |

## Schedule

| ID | WBS | Task | Type | Duration | Start | Finish | Predecessors | Total slack | Free slack | Constraint | Resources | Work | Комментарий |
| --- | --- | --- | --- | --- | --- | --- | --- | --- | --- | --- | --- | --- | --- |
| 1 | 1 | **Типовой шаблон СИЭР (средний модуль)** |  | 149.05d? | 2024-09-02 | 2025-03-28 |  | 0d |  |  |  | 2179.03h |  |
| 2 | 1.1 | **Вехи** |  | 149.05d | 2024-09-02 | 2025-03-28 |  | 0d |  |  |  |  |  |
| 3 | 1.1.1 | Старт | milestone | 0d | 2024-09-02 | 2024-09-02 |  | 0d |  | start no earlier than 2024-09-02 |  |  |  |
| 4 | 1.1.2 | 0.1 - 0.4 Первичный анализ завершен | milestone | 0d | 2024-09-25 | 2024-09-25 | 11 | 131.54d |  |  |  |  |  |
| 5 | 1.1.3 | 0.5 - Прототип для согласования с ПО | milestone | 0d | 2024-10-14 | 2024-10-14 | 20 | 118.9d |  |  |  |  |  |
| 6 | 1.1.4 | 0.6 Прототип с отработкой замечаний ПО и показ ФЗ | milestone | 0d | 2024-11-11 | 2024-11-11 | 21 | 98.9d |  |  |  |  |  |
| 7 | 1.1.5 | 0.9 ФГ | milestone | 0d | 2024-12-11 | 2024-12-11 | 24 | 76.9d |  |  |  |  |  |
| 8 | 1.1.6 | 0.9.1 Совместное тестирование ГЛАВНЫХ ЭФ и БП | milestone | 0d | 2024-12-26 | 2024-12-26 | 31 | 65.84d |  |  |  |  |  |
| 9 | 1.1.7 | 0.9.2 ОЭ | milestone | 0d | 2025-02-13 | 2025-02-13 | 34 | 30.75d |  |  |  |  |  |
| 10 | 1.1.8 | 1.0 ОПЭ | milestone | 0d | 2025-03-28 | 2025-03-28 | 60 | 0d |  |  |  |  |  |
| 11 | 1.2 | **0.1 - 0.4 Первичный анализ** |  | 17.5d? | 2024-09-02 | 2024-09-25 |  | 0d |  |  |  | 115.63h | WE = WE - sum() |
| 12 | 1.2.1 | Анализ ФТ/Бизнес-постановки/БТ |  | 3d? | 2024-09-02 | 2024-09-05 | 3 | 0d |  |  | Методолог1 | 24.03h |  |
| 13 | 1.2.2 | Фиксация финальной версии US |  | 2d? | 2024-09-05 | 2024-09-09 | 12 | 0d |  |  | Методолог1 | 16h |  |
| 14 | 1.2.3 | Разработка БП |  | 8.33d? | 2024-09-09 | 2024-09-19 | 13 | 0d |  |  | Методолог1 [60%] | 40h |  |
| 15 | 1.2.4 | Выявление и фиксация БПР и БТ |  | 8d | 2024-09-09 | 2024-09-19 | 14SS | 136.04d |  |  | Методолог1 [40%] | 25.6h |  |
| 16 | 1.2.5 | Согласование и бейзлайн БП |  | 4.17d? | 2024-09-19 | 2024-09-25 | 14 | 0d |  |  | Методолог1 [30%] | 10h |  |
| 17 | 1.3 | **0.5 - Прототип для согласования с ПО** |  | 14.64d? | 2024-09-23 | 2024-10-14 |  | 0d |  |  |  | 80h | WE = WE - sum() |
| 18 | 1.3.1 | Разработка Концепции реализации и UCM |  | 7.5d? | 2024-09-23 | 2024-10-03 | 16FS-2d | 0d |  |  | Методолог1 [40%] | 24h |  |
| 19 | 1.3.2 | Уточнение и финализация БП |  | 6.67d | 2024-09-23 | 2024-10-02 | 18SS | 126.88d |  |  | Методолог1 [30%] | 16h |  |
| 20 | 1.3.3 | Создание Прототипа |  | 7.14d? | 2024-10-03 | 2024-10-14 | 18, 16 | 0d |  |  | Методолог1 [70%] | 40h |  |
| 21 | 1.4 | **0.6 Прототип с отработкой замечаний ПО и показ ФЗ** |  | 20d? | 2024-10-14 | 2024-11-11 |  | 0d |  |  |  | 48h |  |
| 22 | 1.4.1 | Согласование и бейзлайн концепции реализации |  | 10d? | 2024-10-14 | 2024-10-28 | 20 | 0d |  |  | Методолог1 [30%] | 24h |  |
| 23 | 1.4.2 | Согласование и финализация прототипа |  | 10d? | 2024-10-28 | 2024-11-11 | 22 | 0d |  |  | Методолог1 [30%] | 24h |  |
| 24 | 1.5 | **0.9 ФГ Основные ЭФ и Шаблоны ПФ** |  | 22d? | 2024-11-11 | 2024-12-11 |  | 0d |  |  |  | 244h | WE = WE - sum() |
| 25 | 1.5.1 | Настройка каркаса |  | 2d? | 2024-11-11 | 2024-11-13 | 23 | 0d |  |  | Методолог1 | 16h |  |
| 26 | 1.5.2 | Реализация ОСНОВНЫХ ЭФ |  | 10d | 2024-11-13 | 2024-11-27 | 25 | 0d |  |  | Методолог1 | 80h | 10 дней (10%) |
| 27 | 1.5.3 | Разработка Шаблонов ПФ |  | 10d | 2024-11-27 | 2024-12-11 | 26 | 76.9d |  |  | Методолог1, Методолог2 | 80h | 10 дней |
| 28 | 1.5.4 | РВИ и ЛМД |  | 5d | 2024-11-18 | 2024-11-25 | 26SS+3d | 64.74d | 0d |  | Аналитик1 [70%] | 28h | 5 дней |
| 29 | 1.5.5 | Демо и финализация каркаса |  | 5d? | 2024-11-27 | 2024-12-04 | 26 | 0d |  |  | Методолог1 | 40h |  |
| 30 | 1.6 | Старт финализации разработки версии | milestone | 0d | 2024-12-04 | 2024-12-04 | 29 | 0d |  |  |  |  |  |

| ID | WBS | Task | Duration | Start | Finish | Predecessors | Total slack | Free slack | Resources | Work | Комментарий |
| --- | --- | --- | --- | --- | --- | --- | --- | --- | --- | --- | --- |
| 31 | 1.7 | **0.9.1 Совместное тестирование ГЛАВНЫХ ЭФ и БП** | 16.06d? | 2024-12-04 | 2024-12-26 |  | 0d |  |  | 257h |  |
| 32 | 1.7.1 | Реализация ГЛАВНЫХ ЭФ и части ПФ паралельно | 13.88d? | 2024-12-04 | 2024-12-24 | 30 | 0d |  | Методолог1; Методолог2 | 222h | = 30% * WE |
| 33 | 1.7.2 | Реализация обработчиков | 2.19d? | 2024-12-24 | 2024-12-26 | 32 | 0d |  | Методолог1; Методолог2 | 35h | = 15% * 30%*WE |
| 34 | 1.8 | **0.9.2 Подготовка версии для ОЭ** | 35.09d? | 2024-12-26 | 2025-02-13 |  | 0d |  |  | 496.4h |  |
| 35 | 1.8.1 | Реализация всех ЭФ паралельно | 25.71d? | 2024-12-26 | 2025-01-30 | 33 | 0d |  | Методолог1 [70%]; Методолог2 [70%] | 288h | = 40% * WE |
| 36 | 1.8.2 | Реализация обработчиков | 4.38d? | 2025-01-30 | 2025-02-06 | 35 | 0d |  | Методолог2; Методолог1 | 42h | = 15% * 50% * WE |
| 37 | 1.8.3 | Реализация ПФ паралельно | 18d | 2024-12-26 | 2025-01-21 | 33 | 47.84d |  | Методолог1 [30%]; Методолог2 [30%] | 86.4h | 3 дня / форму |
| 38 | 1.8.4 | Релизные тесты | 3d? | 2025-02-06 | 2025-02-11 | 36 | 0d |  | Методолог1; Методолог2 | 48h |  |
| 39 | 1.8.5 | Регресс тесты | 2d? | 2025-02-11 | 2025-02-13 | 38 | 8.5d |  | Методолог1; Методолог2 | 32h |  |
| 40 | 1.9 | **Разработка 1 итерация каркасная** | 13.17d? | 2024-11-21 | 2024-12-10 |  | 64.74d |  |  | 122h |  |
| 41 | 1.9.1 | Разработка ПЗ по бэку | 4.17d? | 2024-11-21 | 2024-11-27 | 28SS+3d | 64.74d | 0d | Аналитик1 [30%] | 10h |  |
| 42 | 1.9.2 | Реализация бэк методов | 5d? | 2024-11-27 | 2024-12-04 | 41 | 81.74d |  | Разработчик1 | 40h |  |
| 43 | 1.9.3 | Разработка ПЗ по фронту | 2d? | 2024-11-27 | 2024-11-29 | 41 | 64.74d | 0d | Аналитик1 | 16h |  |
| 44 | 1.9.4 | Разрабокта фронта | 7d? | 2024-11-29 | 2024-12-10 | 43 | 77.74d |  | Фронт-разработчик1 | 56h |  |
| 45 | 1.10 | **Разработка 2 итерация Счастливый путь** | 20d? | 2024-12-24 | 2025-01-21 |  | 48.03d |  |  | 220h |  |
| 46 | 1.10.1 | Финальные уточнения ПЗ по бэку | 5d? | 2024-12-24 | 2024-12-31 | 32, 43 | 48.03d | 0d | Аналитик1 | 40h | 5 д |
| 47 | 1.10.2 | Реализация бэк методов | 7.5d? | 2024-12-31 | 2025-01-09 | 46 | 55.53d |  | Разработчик1 | 60h | 60 ч |
| 48 | 1.10.3 | Финальные уточнения ПЗ по фронту | 5d | 2024-12-31 | 2025-01-07 | 46 | 48.03d | 0d | Аналитик1 | 40h | 5 д |
| 49 | 1.10.4 | Разрабокта фронта | 10d? | 2025-01-07 | 2025-01-21 | 48 | 48.03d |  | Фронт-разработчик1 | 80h | 80 ч |
| 50 | 1.11 | **Разработка 3 итерация ИНТЕГРАЦИИ и Полный путь** | 10.5d? | 2025-02-11 | 2025-02-25 |  | 0d |  |  | 124h |  |
| 51 | 1.11.1 | Совместные тестирования и уточнения ПЗ по бэку | 5d | 2025-02-11 | 2025-02-18 | 38 | 0d |  | Аналитик1 | 40h | 5 дней |
| 52 | 1.11.2 | Реализация бэк методов | 5d? | 2025-02-18 | 2025-02-25 | 51 | 15.25d |  | Разработчик1 | 40h |  |
| 53 | 1.11.3 | Тесты и финальные уточнения ПЗ по фронту | 3d | 2025-02-18 | 2025-02-21 | 51 | 0d |  | Аналитик1 | 24h | 3 дня |
| 54 | 1.11.4 | Финализация фронта | 2.5d? | 2025-02-21 | 2025-02-25 | 53 | 0d |  | Фронт-разработчик1 | 20h |  |

| ID | WBS | Task | Type | Duration | Start | Finish | Predecessors | Total slack | Resources | Work | Комментарий |
| --- | --- | --- | --- | --- | --- | --- | --- | --- | --- | --- | --- |
| 55 | 1.12 | **Разработка ФИНАЛИЗАЦИЯ и СОПРОВОЖДЕНИЕ** |  | 7.5d? | 2025-02-25 | 2025-03-07 | 50 | 14.75d |  | 116h |  |
| 56 | 1.12.1 | Тесты и Уточнения ПЗ по бэку |  | 3d | 2025-02-25 | 2025-02-28 |  | 19.25d | Аналитик1 [50%] | 12h |  |
| 57 | 1.12.2 | Стабилизация бэк методов |  | 5d? | 2025-02-25 | 2025-03-04 |  | 17.25d | Разработчик1 | 40h |  |
| 58 | 1.12.3 | Тесты и Уточнения ПЗ по фронту |  | 1d | 2025-02-25 | 2025-02-26 |  | 21.25d | Аналитик1 [50%] | 4h |  |
| 59 | 1.12.4 | Стабилизация фронта |  | 7.5d? | 2025-02-25 | 2025-03-07 |  | 14.75d | Фронт-разработчик1 | 60h |  |
| 60 | 1.13 | **1.0 Подготовка версии для ОПЭ** |  | 22.25d? | 2025-02-25 | 2025-03-28 |  | 0d |  | 356h |  |
| 61 | 1.13.1 | Стабилизация |  | 9.25d? | 2025-02-25 | 2025-03-11 | 39, 54 | 0d | Методолог1; Методолог2 | 148h | = 20% * WE |
| 62 | 1.13.2 | Релизные тесты |  | 2d? | 2025-03-11 | 2025-03-13 | 61 | 0d | Методолог1; Методолог2 | 32h |  |
| 63 | 1.13.3 | Регресс тесты |  | 2d? | 2025-03-13 | 2025-03-17 | 62 | 0d | Методолог1; Методолог2 | 32h |  |
| 64 | 1.13.4 | Развертывание |  | 4d? | 2025-03-17 | 2025-03-21 | 63 | 0d | Методолог1; Методолог2 | 64h |  |
| 65 | 1.13.5 | Релизные тесты |  | 3d? | 2025-03-21 | 2025-03-26 | 64 | 0d | Методолог2; Методолог1 | 48h |  |
| 66 | 1.13.6 | Регресс тесты |  | 2d? | 2025-03-26 | 2025-03-28 | 65 | 0d | Методолог1; Методолог2 | 32h |  |
| 67 | 1.13.7 | Выпуск | milestone | 0d | 2025-03-28 | 2025-03-28 | 66 | 0d |  |  |  |
