# ПроектСИЭР v.0.2

Schedule from MS Project, 2024-09-24 to 2026-10-23.
DIT

## Calendars

- Стандартный: Mon-Fri 09:00-13:00, 14:00-18:00; Sat-Sun off.

## Resources

| Resource | Group |
| --- | --- |
| Методолог1 | Методологи |
| Разработчик1 | Разраб |
| Аналитик1 | Аналитики |
| Фронт-разработчик1 | Разраб |
| Методолог2 | Методологи |
| Методолог3 | Методологи |
| Аналитик2 | Аналитики |
| Разработчик2 | Разраб |
| Фронт-разработчик2 | Разраб |
| Аналитик3 | Аналитики |
| Разработчик3 | Разраб |
| Фронт-разработчик3 | Разраб |
| Методолог4 | Методологи |
| Методолог5 |  |
| Методолог6 |  |
| Методолог1, Методолог2 |  |
| МПМ емкость фич порядка 6000 делали 2 года |  |
| 2200 |  |
| МАП 1.0 = 2200 |  |
| МАП 1.0 = 2200 (2 года) |  |
| МАП 1.0 = 2200 (1,5 года) |  |
| МАП 1.0 = 2200 (1,5 чгода) |  |
| МАП 1.0 = емкость 2200 ч (длит. 1,5 чгода) |  |
| МАП 1.0 = емкость 3500 ч (длит. 1,5 года) |  |

## Schedule

| ID | WBS | Task | Type | Duration | Start | Finish | Predecessors | Total slack | Resources | Work | Версия |
| --- | --- | --- | --- | --- | --- | --- | --- | --- | --- | --- | --- |
| 1 | 1 | **Типовой шаблон СИЭР (средний модуль)** |  | 544d | 2024-09-24 | 2026-10-23 |  | 0d |  |  |  |
| 2 | 1.1 | **Вехи** |  | 544d | 2024-09-24 | 2026-10-23 |  | 0d |  |  |  |
| 3 | 1.1.1 | Старт | milestone | 0d | 2024-09-24 | 2024-09-24 |  | 0d |  |  |  |
| 4 | 1.1.2 | 0.1 - 0.4 Первичный анализ завершен | milestone | 0d | 2024-10-15 | 2024-10-15 | 12 | 528d |  |  |  |
| 5 | 1.1.3 | 0.5 - Прототип для согласования с ПО | milestone | 0d | 2024-10-31 | 2024-10-31 | 21 | 516d |  |  |  |
| 6 | 1.1.4 | 0.6 Прототип с отработкой замечаний ПО и показ ФЗ | milestone | 0d | 2024-11-28 | 2024-11-28 | 22 | 496d |  |  |  |
| 7 | 1.1.5 | 0.9 ФГ по каркасу с основными ЭФ и некоторыми ПФ | milestone | 0d | 2024-12-30 | 2024-12-30 | 25 | 474d |  |  |  |
| 8 | 1.1.6 | 0.9.1 Совместное тестирование всех ГЛАВНЫХ БП, ЭФ и ПФ. Начало обучения. | milestone | 0d | 2025-11-12 | 2025-11-12 | 32 | 247d |  |  |  |
| 9 | 1.1.7 | 0.9.2 ОЭ полноценная но не стабилизированная версия. Обучение финальное. "Быстрый" выход в прод. | milestone | 0d | 2026-07-08 | 2026-07-08 | 35 | 77d |  |  |  |
| 10 | 1.1.8 | 1.0 ОПЭ стабильная версия с hot fixes | milestone | 0d | 2026-10-23 | 2026-10-23 | 41 | 0d |  |  |  |
| 11 | 2 | **Разработка на КСИЭР** |  | 544d? | 2024-09-24 | 2026-10-23 |  | 0d |  | 12297.6h |  |
| 12 | 2.1 | **0.1 - 0.4 Первичный анализ** |  | 16d? | 2024-09-24 | 2024-10-15 |  | 0d |  | 105.6h | 0.5 |
| 13 | 2.1.1 | Анализ ФТ/Бизнес-постановки/БТ |  | 2d? | 2024-09-24 | 2024-09-25 | 3 | 0d | Методолог1 | 16h | 0.5 |
| 14 | 2.1.2 | Фиксация финальной версии US |  | 2d? | 2024-09-26 | 2024-09-27 | 13 | 0d | Методолог1 | 16h | 0.5 |
| 15 | 2.1.3 | Разработка БП |  | 8d? | 2024-09-30 | 2024-10-09 | 14 | 0d | Методолог1 [60%] | 38.4h | 0.5 |
| 16 | 2.1.4 | Выявление и фиксация БПР и БТ. Построение первичных DOM |  | 8d | 2024-09-30 | 2024-10-09 | 15SS | 532d | Методолог1 [40%] | 25.6h | 0.5 |
| 17 | 2.1.5 | Согласование и бейзлайн БП |  | 4d? | 2024-10-10 | 2024-10-15 | 15 | 0d | Методолог1 [30%] | 9.6h | 0.5 |
| 18 | 2.2 | **0.5 - Прототип для согласования с ПО** |  | 14d? | 2024-10-14 | 2024-10-31 |  | 0d |  | 76h | 0.5 |
| 19 | 2.2.1 | Разработка Концепции реализации и UCM на уровне целей и КМД |  | 7d? | 2024-10-14 | 2024-10-22 | 17FS-2d | 0d | Методолог1 [40%] | 22.4h | 0.5 |
| 20 | 2.2.2 | Уточнение и финализация БП |  | 6d | 2024-10-14 | 2024-10-21 | 19SS | 524d | Методолог1 [30%] | 14.4h | 0.5 |
| 21 | 2.2.3 | Создание Прототипа |  | 7d? | 2024-10-23 | 2024-10-31 | 19, 17 | 0d | Методолог1 [70%] | 39.2h | 0.5 |
| 22 | 2.3 | **0.6 Прототип с отработкой замечаний ПО и показ ФЗ** |  | 20d? | 2024-11-01 | 2024-11-28 |  | 0d |  | 48h | 0.5 |
| 23 | 2.3.1 | Согласование и бейзлайн концепции реализации, UCM на уровне сценариев, ЛМД |  | 10d? | 2024-11-01 | 2024-11-14 | 21 | 0d | Методолог1 [30%] | 24h | 0.5 |
| 24 | 2.3.2 | Согласование и финализация прототипа |  | 10d? | 2024-11-15 | 2024-11-28 | 23 | 0d | Методолог1 [30%] | 24h | 0.5 |

Notes:
- 3: Комментарий: МД 1.0 = емкость ~2000 (1 год)
- 4: Комментарий: МПМ 1.0 = емкость 3400 + 1000 быстрый прототип (2 года)
- 5: Комментарий: МАП 1.0 = емкость 3500 ч (длит. 1,5 года)
- 12: Комментарий: 10%
- 13: Комментарий: В жире мы ведем версию с "управленческими" и "функциональными" Epic в рамках выпуска Версии "Функциональнй" Epic = фича (FR/EN).
- 14: Комментарий: "Управленческий" Epic = работы которые никак нельзя привязать в конкретную фичу. Например разработка общей концепции реализа или создание DOM.
- 15: Комментарий: FR: настройка метарегламента например разбивается на 3 фичи: показ списка, работа с фильтрами, предпросмотр, политика по объектам и политика по субъектам.
- 16: Комментарий: Управленческие Эпики должны называться также как пункты плана и по сути в Жире они декомпозируются
- 22: Комментарий: Тут могут быть несколько промежуточных версий между 0,6 и 0.9 как было в МПМ

| ID | WBS | Task | Type | Duration | Start | Finish | Predecessors | Total slack | Free slack | Resources | Work | Комментарий | Версия |
| --- | --- | --- | --- | --- | --- | --- | --- | --- | --- | --- | --- | --- | --- |
| 25 | 2.4 | **0.9 ФГ Основные ЭФ и Шаблоны ПФ** |  | 22d? | 2024-11-29 | 2024-12-30 |  | 0d |  |  | 244h | 20% (итого 30%) | 0.9 |
| 26 | 2.4.1 | Настройка каркаса |  | 2d? | 2024-11-29 | 2024-12-02 | 24 | 0d |  | Методолог1 | 16h |  | 0.9 |
| 27 | 2.4.2 | Реализация ОСНОВНЫХ ЭФ |  | 10d | 2024-12-03 | 2024-12-16 | 26 | 0d |  | Методолог1 | 80h | 10 дней | 0.9 |
| 28 | 2.4.3 | Разработка Шаблонов ПФ |  | 10d | 2024-12-17 | 2024-12-30 | 27 | 444d | 227d | Методолог1, Методолог2 | 80h | 10 дней | 0.9 |
| 29 | 2.4.4 | РВИ и ЛМД |  | 5d | 2024-12-06 | 2024-12-12 | 27SS+3d | 463d | 0d | Аналитик1 [70%] | 28h | 5 дней | 0.9 |
| 30 | 2.4.5 | Демо и финализация каркаса |  | 5d? | 2024-12-17 | 2024-12-23 | 27 | 0d |  | Методолог1 | 40h |  | 0.9 |
| 31 | 2.5 | Старт финализации разработки версии | milestone | 0d | 2024-12-23 | 2024-12-23 | 30 | 0d |  |  |  |  | 0.9 |
| 32 | 2.6 | **0.9.1 Совместное тестирование ГЛАВНЫХ БП, ЭФ и ПФ** |  | 232d? | 2024-12-24 | 2025-11-12 |  | 0d |  |  | 3712h |  | 0.9.1 |
| 33 | 2.6.1 | Реализация ГЛАВНЫХ ЭФ и части ПФ паралельно |  | 202d? | 2024-12-24 | 2025-10-01 | 31 | 0d |  | Методолог1; Методолог2 | 3232h | = 30% * WE (итого 60%) | 0.9.1 |
| 34 | 2.6.2 | Реализация обработчиков |  | 30d? | 2025-10-02 | 2025-11-12 | 33 | 217d | 0d | Методолог1; Методолог2 | 480h | = 15% * 30%*WE | 0.9.1 |
| 35 | 2.7 | **0.9.2 Подготовка версии для ОЭ** |  | 402d? | 2024-12-24 | 2026-07-08 |  | 0d |  |  | 6912h |  | 0.9.2 |
| 36 | 2.7.1 | Реализация всех ЭФ паралельно |  | 345d? | 2024-12-24 | 2026-04-20 | 33SS | 0d |  | Методолог3; Методолог4 | 5520h | = 40% * WE (итого 100%) !!! МБ ПАРАЛЕЛЬ!!! | 0.9.2 |
| 37 | 2.7.2 | Реализация обработчиков |  | 52d? | 2026-04-21 | 2026-07-01 | 36 | 0d |  | Методолог3; Методолог4 | 832h | = 15% * 50% * WE | 0.9.2 |
| 38 | 2.7.3 | Реализация ПФ паралельно |  | 30d | 2025-11-13 | 2025-12-24 | 34, 28 | 217d |  | Методолог1; Методолог2 | 480h | 3 дня / форму !!! МБ ПАРАЛЛЕЛЬ !!! | 0.9.2 |
| 39 | 2.7.4 | Релизные тесты |  | 3d? | 2026-07-02 | 2026-07-06 | 37 | 0d |  | Методолог1; Методолог2 | 48h |  | 0.9.2 |
| 40 | 2.7.5 | Регресс тесты |  | 2d? | 2026-07-07 | 2026-07-08 | 39 | 0d |  | Методолог1; Методолог2 | 32h |  | 0.9.2 |
| 41 | 2.8 | **1.0 Подготовка версии для ОПЭ** |  | 77d? | 2026-07-09 | 2026-10-23 |  | 0d |  |  | 1200h |  | 1.0 |
| 42 | 2.8.1 | Стабилизация |  | 67d? | 2026-07-09 | 2026-10-09 | 40 | 0d |  | Методолог1; Методолог2 | 1072h | = 10% * WE | 1.0 |
| 43 | 2.8.2 | Релизные тесты |  | 3d | 2026-10-12 | 2026-10-14 | 42 | 0d |  | Методолог1; Методолог2 | 48h |  | 1.0 |
| 44 | 2.8.3 | Регресс тесты |  | 1d | 2026-10-15 | 2026-10-15 | 43 | 0d |  | Методолог1 | 8h |  | 1.0 |
| 45 | 2.8.4 | Развертывание |  | 3d | 2026-10-16 | 2026-10-20 | 44 | 0d |  | Методолог1 | 24h |  | 1.0 |
| 46 | 2.8.5 | Релизные тесты |  | 2d | 2026-10-21 | 2026-10-22 | 45 | 0d |  | Методолог2; Методолог1 | 32h |  | 1.0 |
| 47 | 2.8.6 | Регресс тесты |  | 1d | 2026-10-23 | 2026-10-23 | 46 | 0d |  | Методолог1; Методолог2 | 16h |  | 1.0 |
| 48 | 2.8.7 | Выпуск | milestone | 0d | 2026-10-23 | 2026-10-23 | 47 | 0d |  |  |  |  | 1.0 |

| ID | WBS | Task | Duration | Start | Finish | Predecessors | Total slack | Free slack | Resources | Work | Комментарий |
| --- | --- | --- | --- | --- | --- | --- | --- | --- | --- | --- | --- |
| 49 | 3 | **Разработка сервисов и кастомизация СИЭР** | 428d? | 2024-12-11 | 2026-07-31 |  | 60d |  |  | 591.2h |  |
| 50 | 3.1 | **Разработка 1 итерация каркасная** | 12d? | 2024-12-11 | 2024-12-26 |  | 463d |  |  | 119.2h |  |
| 51 | 3.1.1 | Разработка ПЗ по бэку | 3d? | 2024-12-11 | 2024-12-13 | 29SS+3d | 463d | 0d | Аналитик1 [30%] | 7.2h |  |
| 52 | 3.1.2 | Реализация бэк методов | 5d? | 2024-12-16 | 2024-12-20 | 51 | 480d |  | Разработчик1 | 40h |  |
| 53 | 3.1.3 | Разработка ПЗ по фронту | 2d? | 2024-12-16 | 2024-12-17 | 51 | 463d | 0d | Аналитик1 | 16h |  |
| 54 | 3.1.4 | Разрабокта фронта | 7d? | 2024-12-18 | 2024-12-26 | 53 | 476d |  | Фронт-разработчик1 | 56h |  |
| 55 | 3.2 | **Разработка 2 итерация Счастливый путь** | 20d? | 2025-10-02 | 2025-10-29 |  | 257d |  |  | 224h |  |
| 56 | 3.2.1 | Финальные уточнения ПЗ по бэку | 5d? | 2025-10-02 | 2025-10-08 | 33, 53 | 257d | 0d | Аналитик1 | 40h | 5 д |
| 57 | 3.2.2 | Реализация бэк методов | 8d? | 2025-10-09 | 2025-10-20 | 56 | 264d |  | Разработчик1 | 64h | 60 ч |
| 58 | 3.2.3 | Финальные уточнения ПЗ по фронту | 5d | 2025-10-09 | 2025-10-15 | 56 | 257d | 0d | Аналитик1 | 40h | 5 д |
| 59 | 3.2.4 | Разрабокта фронта | 10d? | 2025-10-16 | 2025-10-29 | 58 | 257d |  | Фронт-разработчик1 | 80h | 80 ч |
| 60 | 3.3 | **Разработка 3 итерация ИНТЕГРАЦИИ и Полный путь** | 11d? | 2026-07-07 | 2026-07-21 |  | 60d | 0d |  | 128h |  |
| 61 | 3.3.1 | Совместные тестирования и уточнения ПЗ по бэку | 5d | 2026-07-07 | 2026-07-13 | 39 | 60d | 0d | Аналитик1 | 40h | 5 дней |
| 62 | 3.3.2 | Реализация бэк методов | 5d? | 2026-07-14 | 2026-07-20 | 61 | 61d |  | Разработчик1 | 40h |  |
| 63 | 3.3.3 | Тесты и финальные уточнения ПЗ по фронту | 3d | 2026-07-14 | 2026-07-16 | 61 | 60d | 0d | Аналитик1 | 24h | 3 дня |
| 64 | 3.3.4 | Финализация фронта | 3d? | 2026-07-17 | 2026-07-21 | 63 | 60d |  | Фронт-разработчик1 | 24h |  |
| 65 | 3.4 | **Разработка ФИНАЛИЗАЦИЯ и СОПРОВОЖДЕНИЕ** | 8d? | 2026-07-22 | 2026-07-31 | 60 | 60d |  |  | 120h |  |
| 66 | 3.4.1 | Тесты и Уточнения ПЗ по бэку | 3d | 2026-07-22 | 2026-07-24 |  | 65d |  | Аналитик1 [50%] | 12h |  |
| 67 | 3.4.2 | Стабилизация бэк методов | 5d? | 2026-07-22 | 2026-07-28 |  | 63d |  | Разработчик1 | 40h |  |
| 68 | 3.4.3 | Тесты и Уточнения ПЗ по фронту | 1d | 2026-07-22 | 2026-07-22 |  | 67d |  | Аналитик1 [50%] | 4h |  |
| 69 | 3.4.4 | Стабилизация фронта | 8d? | 2026-07-22 | 2026-07-31 |  | 60d |  | Фронт-разработчик1 | 64h |  |
