# ПроектСИЭР v.0.2

Schedule from MS Project, 2022-08-24 to 2024-03-11.
DIT

## Calendars

- Стандартный: Mon-Fri 09:00-13:00, 14:00-18:00; Sat-Sun off.

## Resources

| Resource | Group |
| --- | --- |
| Методолог1 | Методологи |
| Разработчик1 | Разраб |
| Аналитик1 | Аналитики |
| Фронт-разработчик1 | Разраб |
| Методолог2 | Методологи |
| Методолог3 | Методологи |
| Аналитик2 | Аналитики |
| Разработчик2 | Разраб |
| Фронт-разработчик2 | Разраб |
| Аналитик3 | Аналитики |
| Разработчик3 | Разраб |
| Фронт-разработчик3 | Разраб |
| Методолог4 | Методологи |
| Методолог5 |  |
| Методолог6 |  |
| Методолог1, Методолог2 |  |
| МПМ емкость фич порядка 6000 делали 2 года |  |
| 2200 |  |
| МАП 1.0 = 2200 |  |
| МАП 1.0 = 2200 (2 года) |  |
| МАП 1.0 = 2200 (1,5 года) |  |
| МАП 1.0 = 2200 (1,5 чгода) |  |
| МАП 1.0 = емкость 2200 ч (длит. 1,5 чгода) |  |
| МАП 1.0 = емкость 3500 ч (длит. 1,5 года) |  |

## Schedule

| ID | WBS | Task | Type | Duration | Start | Finish | Predecessors | Total slack | Constraint | Resources | Work | Версия |
| --- | --- | --- | --- | --- | --- | --- | --- | --- | --- | --- | --- | --- |
| 1 | 1 | **Типовой шаблон СИЭР (средний модуль)** |  | 403.8d | 2022-08-24 | 2024-03-11 |  | 0d |  |  |  |  |
| 2 | 1.1 | **Вехи** |  | 403.8d | 2022-08-24 | 2024-03-11 |  | 0d |  |  |  |  |
| 3 | 1.1.1 | Старт | milestone | 0d | 2022-08-24 | 2022-08-24 |  | 0d | start no earlier than 2022-08-24 |  |  |  |
| 4 | 1.1.2 | 0.1 - 0.4 Первичный анализ завершен | milestone | 0d | 2022-09-14 | 2022-09-14 | 12 | 387.8d |  |  |  |  |
| 5 | 1.1.3 | 0.5 - Прототип для согласования с ПО | milestone | 0d | 2022-09-30 | 2022-09-30 | 21 | 375.8d |  |  |  |  |
| 6 | 1.1.4 | 0.6 Прототип с отработкой замечаний ПО и показ ФЗ | milestone | 0d | 2022-10-28 | 2022-10-28 | 22 | 355.8d |  |  |  |  |
| 7 | 1.1.5 | 0.9 ФГ по каркасу с основными ЭФ и некоторыми ПФ | milestone | 0d | 2022-11-29 | 2022-11-29 | 25 | 333.8d |  |  |  |  |
| 8 | 1.1.6 | 0.9.1 Совместное тестирование всех ГЛАВНЫХ БП, ЭФ и ПФ. Начало обучения. | milestone | 0d | 2023-05-12 | 2023-05-12 | 32 | 215.8d |  |  |  |  |
| 9 | 1.1.7 | 0.9.2 ОЭ полноценная но не стабилизированная версия. Обучение финальное. "Быстрый" выход в прод. | milestone | 0d | 2024-01-18 | 2024-01-18 | 35 | 36.8d |  |  |  |  |
| 10 | 1.1.8 | 1.0 ОПЭ стабильная версия с hot fixes | milestone | 0d | 2024-03-11 | 2024-03-11 | 42 | 0d |  |  |  |  |
| 11 | 2 | **Разработка на КСИЭР** |  | 403.8d? | 2022-08-24 | 2024-03-11 |  | 0d |  |  | 12297.6h |  |
| 12 | 2.1 | **0.1 - 0.4 Первичный анализ** |  | 16d? | 2022-08-24 | 2022-09-14 |  | 0d |  |  | 105.6h | 0.5 |
| 13 | 2.1.1 | Анализ ФТ/Бизнес-постановки/БТ |  | 2d? | 2022-08-24 | 2022-08-25 | 3 | 0d |  | Методолог1 | 16h | 0.5 |
| 14 | 2.1.2 | Фиксация финальной версии US |  | 2d? | 2022-08-26 | 2022-08-29 | 13 | 0d |  | Методолог1 | 16h | 0.5 |
| 15 | 2.1.3 | Разработка БП |  | 8d? | 2022-08-30 | 2022-09-08 | 14 | 0d |  | Методолог1 [60%] | 38.4h | 0.5 |
| 16 | 2.1.4 | Выявление и фиксация БПР и БТ. Построение первичных DOM |  | 8d | 2022-08-30 | 2022-09-08 | 15SS | 391.8d |  | Методолог1 [40%] | 25.6h | 0.5 |
| 17 | 2.1.5 | Согласование и бейзлайн БП |  | 4d? | 2022-09-09 | 2022-09-14 | 15 | 0d |  | Методолог1 [30%] | 9.6h | 0.5 |
| 18 | 2.2 | **0.5 - Прототип для согласования с ПО** |  | 14d? | 2022-09-13 | 2022-09-30 |  | 0d |  |  | 76h | 0.5 |
| 19 | 2.2.1 | Разработка Концепции реализации и UCM на уровне целей и КМД |  | 7d? | 2022-09-13 | 2022-09-21 | 17FS-2d | 0d |  | Методолог1 [40%] | 22.4h | 0.5 |
| 20 | 2.2.2 | Уточнение и финализация БП |  | 6d | 2022-09-13 | 2022-09-20 | 19SS | 383.8d |  | Методолог1 [30%] | 14.4h | 0.5 |
| 21 | 2.2.3 | Создание Прототипа |  | 7d? | 2022-09-22 | 2022-09-30 | 19, 17 | 0d |  | Методолог1 [70%] | 39.2h | 0.5 |
| 22 | 2.3 | **0.6 Прототип с отработкой замечаний ПО и показ ФЗ** |  | 20d? | 2022-10-03 | 2022-10-28 |  | 0d |  |  | 48h | 0.5 |
| 23 | 2.3.1 | Согласование и бейзлайн концепции реализации, UCM на уровне сценариев, ЛМД |  | 10d? | 2022-10-03 | 2022-10-14 | 21 | 0d |  | Методолог1 [30%] | 24h | 0.5 |
| 24 | 2.3.2 | Согласование и финализация прототипа |  | 10d? | 2022-10-17 | 2022-10-28 | 23 | 0d |  | Методолог1 [30%] | 24h | 0.5 |

Notes:
- 3: Комментарий: МД 1.0 = емкость ~2000 (1 год)
- 4: Комментарий: МПМ 1.0 = емкость 3400 + 1000 быстрый прототип (2 года)
- 5: Комментарий: МАП 1.0 = емкость 3500 ч (длит. 1,5 года)
- 12: Комментарий: 10%
- 13: Комментарий: В жире мы ведем версию с "управленческими" и "функциональными" Epic в рамках выпуска Версии "Функциональнй" Epic = фича (FR/EN).
- 14: Комментарий: "Управленческий" Epic = работы которые никак нельзя привязать в конкретную фичу. Например разработка общей концепции реализа или создание DOM.
- 15: Комментарий: FR: настройка метарегламента например разбивается на 3 фичи: показ списка, работа с фильтрами, предпросмотр, политика по объектам и политика по субъектам.
- 16: Комментарий: Управленческие Эпики должны называться также как пункты плана и по сути в Жире они декомпозируются
- 22: Комментарий: Тут могут быть несколько промежуточных версий между 0,6 и 0.9 как было в МПМ

| ID | WBS | Task | Type | Duration | Start | Finish | Predecessors | Total slack | Free slack | Resources | Work | Комментарий | Версия |
| --- | --- | --- | --- | --- | --- | --- | --- | --- | --- | --- | --- | --- | --- |
| 25 | 2.4 | **0.9 ФГ Основные ЭФ и Шаблоны ПФ** |  | 22d? | 2022-10-31 | 2022-11-29 |  | 0d |  |  | 244h | 20% (итого 30%) | 0.9 |
| 26 | 2.4.1 | Настройка каркаса |  | 2d? | 2022-10-31 | 2022-11-01 | 24 | 0d |  | Методолог1 | 16h |  | 0.9 |
| 27 | 2.4.2 | Реализация ОСНОВНЫХ ЭФ |  | 10d | 2022-11-02 | 2022-11-15 | 26 | 0d |  | Методолог1 | 80h | 10 дней | 0.9 |
| 28 | 2.4.3 | Разработка Шаблонов ПФ |  | 10d | 2022-11-16 | 2022-11-29 | 27 | 267d |  | Методолог1, Методолог2 | 80h | 10 дней | 0.9 |
| 29 | 2.4.4 | РВИ и ЛМД |  | 5d | 2022-11-07 | 2022-11-11 | 27SS+3d | 322.8d | 0d | Аналитик1 [70%] | 28h | 5 дней | 0.9 |
| 30 | 2.4.5 | Демо и финализация каркаса |  | 5d? | 2022-11-16 | 2022-11-22 | 27 | 0d |  | Методолог1 | 40h |  | 0.9 |
| 31 | 2.5 | Старт финализации разработки версии | milestone | 0d | 2022-11-22 | 2022-11-22 | 30 | 0d |  |  |  |  | 0.9 |
| 32 | 2.6 | **0.9.1 Совместное тестирование ГЛАВНЫХ БП, ЭФ и ПФ** |  | 123d? | 2022-11-23 | 2023-05-12 |  | 0d |  |  | 2712h |  | 0.9.1 |
| 33 | 2.6.1 | Реализация ГЛАВНЫХ ЭФ и части ПФ паралельно |  | 93d? | 2022-11-23 | 2023-03-31 | 31 | 0d |  | Методолог1; Методолог2; Методолог5 | 2232h | = 30% * WE (итого 60%) | 0.9.1 |
| 34 | 2.6.2 | Реализация обработчиков |  | 30d? | 2023-04-03 | 2023-05-12 | 33 | 49d | 0d | Методолог1; Методолог2 | 480h | = 15% * 30%*WE | 0.9.1 |
| 35 | 2.7 | **0.9.2 Подготовка версии для ОЭ** |  | 302d? | 2022-11-23 | 2024-01-18 |  | 0d |  |  | 7912h |  | 0.9.2 |
| 36 | 2.7.1 | Реализация всех ЭФ паралельно |  | 220d? | 2022-11-23 | 2023-09-26 | 33SS | 0d |  | Методолог3; Методолог4 | 3520h | = 40% * WE (итого 100%) !!! МБ ПАРАЛЕЛЬ!!! | 0.9.2 |
| 37 | 2.7.2 | Реализация всех ЭФ паралельно |  | 125d? | 2023-05-15 | 2023-11-03 | 34 | 49d | 24d | Методолог1; Методолог2; Методолог5 | 3000h |  |  |
| 38 | 2.7.3 | Реализация обработчиков |  | 52d? | 2023-09-27 | 2023-12-07 | 36 | 0d |  | Методолог3; Методолог4 | 832h | = 15% * 50% * WE | 0.9.2 |
| 39 | 2.7.4 | Реализация ПФ паралельно |  | 30d | 2023-12-08 | 2024-01-18 | 34, 28, 38 | 0d |  | Методолог3; Методолог4 | 480h | 3 дня / форму !!! МБ ПАРАЛЛЕЛЬ !!! | 0.9.2 |
| 40 | 2.7.5 | Релизные тесты |  | 3d? | 2023-12-08 | 2023-12-12 | 38, 37 | 25d | 0d | Методолог1; Методолог2 | 48h |  | 0.9.2 |
| 41 | 2.7.6 | Регресс тесты |  | 2d? | 2023-12-13 | 2023-12-14 | 40 | 25d |  | Методолог1; Методолог2 | 32h |  | 0.9.2 |
| 42 | 2.8 | **1.0 Подготовка версии для ОПЭ** |  | 36.8d? | 2024-01-19 | 2024-03-11 |  | 0d |  |  | 1200h |  | 1.0 |
| 43 | 2.8.1 | Стабилизация |  | 26.8d? | 2024-01-19 | 2024-02-26 | 41, 39 | 0d |  | Методолог1; Методолог2; Методолог3; Методолог4; Методолог5 | 1072h | = 10% * WE | 1.0 |
| 44 | 2.8.2 | Релизные тесты |  | 3d | 2024-02-26 | 2024-02-29 | 43 | 0d |  | Методолог1; Методолог2 | 48h |  | 1.0 |
| 45 | 2.8.3 | Регресс тесты |  | 1d | 2024-02-29 | 2024-03-01 | 44 | 0d |  | Методолог1 | 8h |  | 1.0 |
| 46 | 2.8.4 | Развертывание |  | 3d | 2024-03-01 | 2024-03-06 | 45 | 0d |  | Методолог1 | 24h |  | 1.0 |
| 47 | 2.8.5 | Релизные тесты |  | 2d | 2024-03-06 | 2024-03-08 | 46 | 0d |  | Методолог2; Методолог1 | 32h |  | 1.0 |
| 48 | 2.8.6 | Регресс тесты |  | 1d | 2024-03-08 | 2024-03-11 | 47 | 0d |  | Методолог1; Методолог2 | 16h |  | 1.0 |
| 49 | 2.8.7 | Выпуск | milestone | 0d | 2024-03-11 | 2024-03-11 | 48 | 0d |  |  |  |  | 1.0 |

| ID | WBS | Task | Duration | Start | Finish | Predecessors | Total slack | Free slack | Resources | Work | Комментарий |
| --- | --- | --- | --- | --- | --- | --- | --- | --- | --- | --- | --- |
| 50 | 3 | **Разработка сервисов и кастомизация СИЭР** | 303d? | 2022-11-10 | 2024-01-08 |  | 44.8d |  |  | 591.2h |  |
| 51 | 3.1 | **Разработка 1 итерация каркасная** | 12d? | 2022-11-10 | 2022-11-25 |  | 322.8d |  |  | 119.2h |  |
| 52 | 3.1.1 | Разработка ПЗ по бэку | 3d? | 2022-11-10 | 2022-11-14 | 29SS+3d | 322.8d | 0d | Аналитик1 [30%] | 7.2h |  |
| 53 | 3.1.2 | Реализация бэк методов | 5d? | 2022-11-15 | 2022-11-21 | 52 | 339.8d |  | Разработчик1 | 40h |  |
| 54 | 3.1.3 | Разработка ПЗ по фронту | 2d? | 2022-11-15 | 2022-11-16 | 52 | 322.8d | 0d | Аналитик1 | 16h |  |
| 55 | 3.1.4 | Разрабокта фронта | 7d? | 2022-11-17 | 2022-11-25 | 54 | 335.8d |  | Фронт-разработчик1 | 56h |  |
| 56 | 3.2 | **Разработка 2 итерация Счастливый путь** | 20d? | 2023-04-03 | 2023-04-28 |  | 225.8d |  |  | 224h |  |
| 57 | 3.2.1 | Финальные уточнения ПЗ по бэку | 5d? | 2023-04-03 | 2023-04-07 | 33, 54 | 225.8d | 0d | Аналитик1 | 40h | 5 д |
| 58 | 3.2.2 | Реализация бэк методов | 8d? | 2023-04-10 | 2023-04-19 | 57 | 232.8d |  | Разработчик1 | 64h | 60 ч |
| 59 | 3.2.3 | Финальные уточнения ПЗ по фронту | 5d | 2023-04-10 | 2023-04-14 | 57 | 225.8d | 0d | Аналитик1 | 40h | 5 д |
| 60 | 3.2.4 | Разрабокта фронта | 10d? | 2023-04-17 | 2023-04-28 | 59 | 225.8d |  | Фронт-разработчик1 | 80h | 80 ч |
| 61 | 3.3 | **Разработка 3 итерация ИНТЕГРАЦИИ и Полный путь** | 11d? | 2023-12-13 | 2023-12-27 |  | 44.8d | 0d |  | 128h |  |
| 62 | 3.3.1 | Совместные тестирования и уточнения ПЗ по бэку | 5d | 2023-12-13 | 2023-12-19 | 40 | 44.8d | 0d | Аналитик1 | 40h | 5 дней |
| 63 | 3.3.2 | Реализация бэк методов | 5d? | 2023-12-20 | 2023-12-26 | 62 | 45.8d |  | Разработчик1 | 40h |  |
| 64 | 3.3.3 | Тесты и финальные уточнения ПЗ по фронту | 3d | 2023-12-20 | 2023-12-22 | 62 | 44.8d | 0d | Аналитик1 | 24h | 3 дня |
| 65 | 3.3.4 | Финализация фронта | 3d? | 2023-12-25 | 2023-12-27 | 64 | 44.8d |  | Фронт-разработчик1 | 24h |  |
| 66 | 3.4 | **Разработка ФИНАЛИЗАЦИЯ и СОПРОВОЖДЕНИЕ** | 8d? | 2023-12-28 | 2024-01-08 | 61 | 44.8d |  |  | 120h |  |
| 67 | 3.4.1 | Тесты и Уточнения ПЗ по бэку | 3d | 2023-12-28 | 2024-01-01 |  | 49.8d |  | Аналитик1 [50%] | 12h |  |
| 68 | 3.4.2 | Стабилизация бэк методов | 5d? | 2023-12-28 | 2024-01-03 |  | 47.8d |  | Разработчик1 | 40h |  |
| 69 | 3.4.3 | Тесты и Уточнения ПЗ по фронту | 1d | 2023-12-28 | 2023-12-28 |  | 51.8d |  | Аналитик1 [50%] | 4h |  |
| 70 | 3.4.4 | Стабилизация фронта | 8d? | 2023-12-28 | 2024-01-08 |  | 44.8d |  | Фронт-разработчик1 | 64h |  |
