# ПроектСИЭР v.0.2

Schedule from MS Project, 2024-07-23 to 2024-12-26, A marks actual dates.
DIT

## Calendars

- Стандартный: Mon-Fri 09:00-13:00, 14:00-18:00; Sat-Sun off.

## Resources

| Resource | Group |
| --- | --- |
| Миронова | Методологи |
| Аленин | Разраб |
| Невмывака | Аналитики |
| Фронт-разработчик1 | Разраб |
| Методолог2 | Методологи |
| Методолог3 | Методологи |
| Аналитик2 | Аналитики |
| Разработчик2 | Разраб |
| Фронт-разработчик2 | Разраб |
| Аналитик3 | Аналитики |
| Разработчик3 | Разраб |
| Фронт-разработчик3 | Разраб |
| Методолог4 | Методологи |
| Методолог5 |  |
| Методолог6 |  |

## Schedule

| ID | WBS | Task | Type | Duration | Start | Finish | Predecessors | Complete | Remaining | Total slack | Free slack | Constraint | Resources | Work | Actual work |
| --- | --- | --- | --- | --- | --- | --- | --- | --- | --- | --- | --- | --- | --- | --- | --- |
| 1 | 1 | **ММОИВ** |  | 112.52d? | 2024-07-23 A | 2024-12-26 |  | 37% | 70.77d? | 28.23d |  |  |  | 1256.03h | 388.03h |
| 2 | 1.1 | **Вехи** |  | 112.52d | 2024-07-23 A | 2024-12-26 |  |  | 112.52d | 28.23d |  |  |  |  |  |
| 3 | 1.1.1 | Старт | milestone | 0d | 2024-07-23 A | 2024-07-23 A |  | 100% |  |  |  | start no earlier than 2024-07-23 |  |  |  |
| 4 | 1.1.2 | 0.5 - Прототип для согласования с ПО | milestone | 0d | 2024-08-28 A | 2024-08-28 A | 13 | 100% |  |  |  |  |  |  |  |
| 5 | 1.1.3 | 0.6 Прототип с отработкой замечаний ПО и показ ФЗ | milestone | 0d | 2024-09-27 | 2024-09-27 | 20 |  |  | 88.18d |  |  |  |  |  |
| 6 | 1.1.4 | 0.9 ФГ ММОИВ | milestone | 0d | 2024-10-14 | 2024-10-14 | 23 |  |  | 61.75d | 0d |  |  |  |  |
| 7 | 1.2 | 0.9 ФГ ММОИВ | milestone | 0d | 2024-10-14 | 2024-10-14 | 6 |  |  | 61.75d |  |  |  |  |  |
| 8 | 1.1.6 | 0.9.1 Совместное тестирование всех ЭФ и БП | milestone | 0d | 2024-11-04 | 2024-11-04 | 33 |  |  | 46.75d |  |  |  |  |  |
| 9 | 1.1.7 | 0.9.2 ОЭ ММОИВ | milestone | 0d | 2024-12-09 | 2024-12-09 | 41 |  |  | 21.75d | 0d |  |  |  |  |
| 10 | 1.4 | 0.9.2 ОЭ ММОИВ | milestone | 0d | 2024-12-09 | 2024-12-09 | 9 |  |  | 21.75d |  |  |  |  |  |
| 11 | 1.1.9 | 1.0 ОПЭ ММОИВ | milestone | 0d | 2024-12-26 | 2024-12-26 | 30 |  |  | 9d | 0d |  |  |  |  |
| 12 | 1.6 | 1.0 ОПЭ ММОИВ | milestone | 0d | 2024-12-26 | 2024-12-26 | 11 |  |  | 9d |  |  |  |  |  |
| 13 | 1.2 | **0.5 - Прототип для согласования с ПО** |  | 26.67d? | 2024-07-23 A | 2024-08-28 A |  | 100% |  |  |  |  |  | 184.03h | 184.03h |
| 14 | 1.2.1 | Анализ ФТ |  | 3d? | 2024-07-23 A | 2024-07-26 A | 3 | 100% |  |  |  |  | Миронова | 24.03h | 24.03h |
| 15 | 1.2.2 | Фиксация финальной версии US |  | 2d? | 2024-07-26 A | 2024-07-30 A | 14 | 100% |  |  |  |  | Миронова | 16h | 16h |
| 16 | 1.2.3 | Разработка БП |  | 5d? | 2024-07-30 A | 2024-08-06 A | 15 | 100% |  |  |  |  | Миронова | 40h | 40h |
| 17 | 1.2.4 | Согласование и бейзлайн БП |  | 16.67d? | 2024-08-06 A | 2024-08-28 A | 16 | 100% |  |  |  |  | Миронова [30%] | 40h | 40h |
| 18 | 1.2.5 | Разработка Концепции реализации |  | 4.29d? | 2024-08-06 A | 2024-08-12 A | 16 | 100% |  |  |  |  | Миронова [70%] | 24h | 24h |
| 19 | 1.2.6 | Создание Прототипа |  | 7.14d? | 2024-08-12 A | 2024-08-21 A | 18 | 100% |  |  |  |  | Миронова [70%] | 40h | 40h |
| 20 | 1.3 | **0.6 Прототип с отработкой замечаний ПО и показ ФЗ** |  | 26.67d? | 2024-08-21 A | 2024-09-27 A |  | 100% |  |  |  |  |  | 64h | 64h |
| 21 | 1.3.1 | Согласование и бейзлайн концепции реализации |  | 16.67d? | 2024-08-21 A | 2024-09-13 A | 19 | 100% |  |  |  |  | Миронова [30%] | 40h | 40h |
| 22 | 1.3.2 | Согласование и финализация прототипа |  | 10d? | 2024-09-13 A | 2024-09-27 A | 21 | 100% |  |  |  |  | Миронова [30%] | 24h | 24h |
| 23 | 1.4 | **0.9 ФГ Основные ЭФ и Шаблоны ПФ** |  | 38.33d? | 2024-08-21 A | 2024-10-14 |  | 43% | 21.98d? | 80.98d | 0d |  |  | 320h | 140h |
| 24 | 1.4.1 | Настройка каркаса |  | 21.43d? | 2024-08-21 A | 2024-09-19 A | 21SS | 100% |  |  |  |  | Миронова [70%] | 120h | 120h |
| 25 | 1.4.2 | Демо Каркаса | milestone | 0d | 2024-09-25 | 2024-09-25 | 24 |  |  | 75.52d |  | start no earlier than 2024-09-25 |  |  |  |
| 26 | 1.4.3 | Реализация ОСНОВНЫХ ЭФ |  | 16.67d? | 2024-08-21 A | 2024-09-13 | 21SS | 50% | 8.33d? | 28.23d | 0d |  | Методолог2 [30%] | 40h | 20h |
| 27 | 1.4.4 | Разработка Шаблонов ПФ |  | 16.67d? | 2024-09-13 | 2024-10-07 | 26 |  |  | 9d | 0d |  | Методолог2 [30%] | 40h |  |
| 28 | 1.4.5 | Демо и финализация каркаса |  | 5d? | 2024-10-07 | 2024-10-14 | 24, 27 |  |  | 9d | 0d |  | Миронова | 40h |  |
| 29 | 1.4.6 | РВИ и ЛМД |  | 10d? | 2024-09-24 | 2024-10-07 |  |  |  | 45.52d | 4.77d |  | Невмывака | 80h |  |

| ID | WBS | Task | Type | Duration | Start | Finish | Predecessors | Total slack | Free slack | Resources | Work |
| --- | --- | --- | --- | --- | --- | --- | --- | --- | --- | --- | --- |
| 30 | 1.5 | **0.9.1 Подготовка релизной версии для ОПЭ** |  | 52.75d? | 2024-10-14 | 2024-12-26 |  | 28.23d | 0d |  | 688h |
| 31 | 1.5.1 | старт | milestone | 0d | 2024-10-14 | 2024-10-14 | 28 | 9d | 0d |  |  |
| 32 | 1.5.2 | Реализация всех ЭФ паралельно |  | 5d? | 2024-10-14 | 2024-10-21 | 31 | 56.75d |  | Миронова [60%] | 24h |
| 33 | 1.5.3 | Реализация обработчиков |  | 15d? | 2024-10-14 | 2024-11-04 | 31 | 46.75d | 0d | Миронова [20%] | 24h |
| 34 | 1.5.4 | Реализация ПФ паралельно |  | 35d? | 2024-10-14 | 2024-12-02 | 31 | 9d | 0d | Миронова [20%] | 56h |
| 35 | 1.5.5 | **Разработка 3 итерация ФИНАЛИЗАЦИЯ** |  | 21d? | 2024-10-14 | 2024-11-12 | 31 | 59.98d |  |  | 208h |
| 36 | 1.5.5.1 | Совместные тестирования и уточнения ПЗ по бэку |  | 4d? | 2024-10-14 | 2024-10-18 | 29 | 40.75d | 0d | Невмывака | 32h |
| 37 | 1.5.5.2 | Реализация бэк методов |  | 5d? | 2024-10-18 | 2024-10-25 | 36 | 52.75d |  | Аленин | 40h |
| 38 | 1.5.5.3 | Тесты и финальные уточнения ПЗ по фронту |  | 10d? | 2024-10-18 | 2024-11-01 | 36 | 40.75d | 0d | Невмывака | 80h |
| 39 | 1.5.5.4 | Финализация фронта |  | 7d? | 2024-11-01 | 2024-11-12 | 38 | 40.75d |  | Фронт-разработчик1 | 56h |
| 40 | 1.5.6 | Релизные тесты |  | 3d? | 2024-12-02 | 2024-12-05 | 34 | 9d | 0d | Миронова; Методолог2 | 48h |
| 41 | 1.5.7 | Регресс тесты |  | 2d? | 2024-12-05 | 2024-12-09 | 40 | 9d | 0d | Миронова; Методолог2 | 32h |
| 42 | 1.5.8 | **Разработка СОПРОВОЖДЕНИЕ** |  | 5d? | 2024-12-05 | 2024-12-12 | 40 | 37.98d |  |  | 100h |
| 43 | 1.5.8.1 | Тесты и Уточнения ПЗ по бэку |  | 5d? | 2024-12-05 | 2024-12-12 |  | 18.75d |  | Невмывака [50%] | 20h |
| 44 | 1.5.8.2 | Стабилизация бэк методов |  | 2.5d? | 2024-12-05 | 2024-12-10 |  | 21.25d |  | Аленин | 20h |
| 45 | 1.5.8.3 | Тесты и Уточнения ПЗ по фронту |  | 5d? | 2024-12-05 | 2024-12-12 |  | 18.75d |  | Невмывака [50%] | 20h |
| 46 | 1.5.8.4 | Стабилизация фронта |  | 5d? | 2024-12-05 | 2024-12-12 |  | 18.75d |  | Фронт-разработчик1 | 40h |
| 47 | 1.5.9 | Стабилизация |  | 3.75d? | 2024-12-09 | 2024-12-13 | 41 | 9d | 0d | Миронова; Методолог2 | 60h |
| 48 | 1.5.10 | Релизные тесты |  | 2d? | 2024-12-13 | 2024-12-17 | 47 | 9d | 0d | Методолог2 | 16h |
| 49 | 1.5.11 | Регресс тесты |  | 2d? | 2024-12-13 | 2024-12-17 | 48SS | 9d | 0d | Миронова | 16h |
| 50 | 1.5.12 | Развертывание |  | 4d? | 2024-12-17 | 2024-12-23 | 49 | 9d | 0d | Миронова; Методолог2 | 64h |
| 51 | 1.5.13 | Релизные тесты |  | 3d? | 2024-12-23 | 2024-12-26 | 50 | 9d | 0d | Методолог2 | 24h |
| 52 | 1.5.14 | Регресс тесты |  | 2d? | 2024-12-23 | 2024-12-25 | 51SS | 10d | 0d | Миронова | 16h |
| 53 | 1.5.15 | Выпуск | milestone | 0d | 2024-12-25 | 2024-12-25 | 52 | 10d |  |  |  |
