# ПроектСИЭР v.0.2

Schedule from MS Project, 2024-08-05 to 2025-02-04, A marks actual dates.
DIT

## Calendars

- Стандартный: Mon-Fri 09:00-13:00, 14:00-18:00; Sat-Sun off.

## Resources

| Resource | Group |
| --- | --- |
| Нарубина | Методологи |
| Павленко | Разраб |
| Нарубина | Аналитики |
| Фронт-разработчик1 | Разраб |
| Методолог2 | Методологи |
| Методолог3 | Методологи |
| Аналитик2 | Аналитики |
| Разработчик2 | Разраб |
| Фронт-разработчик2 | Разраб |
| Аналитик3 | Аналитики |
| Разработчик3 | Разраб |
| Фронт-разработчик3 | Разраб |
| Методолог4 | Методологи |
| Методолог5 |  |
| Методолог6 |  |

## Schedule

| ID | WBS | Task | Type | Duration | Start | Finish | Predecessors | Complete | Remaining | Total slack | Free slack | Constraint | Resources | Work | Actual work |
| --- | --- | --- | --- | --- | --- | --- | --- | --- | --- | --- | --- | --- | --- | --- | --- |
| 1 | 1 | **Типовой шаблон СИЭР (средний модуль)** |  | 131.75d? | 2024-08-05 A | 2025-02-04 |  | 37% | 83.07d? | 0d |  |  |  | 1624.03h | 544.03h |
| 2 | 1.1 | **Вехи** |  | 131.75d | 2024-08-05 A | 2025-02-04 |  |  | 131.75d | 0d |  |  |  |  |  |
| 3 | 1.1.1 | Старт | milestone | 0d | 2024-08-05 A | 2024-08-05 A |  | 100% |  |  |  | start no earlier than 2024-08-05 |  |  |  |
| 4 | 1.1.2 | 0.5 - Прототип для согласования с ПО | milestone | 0d | 2024-09-10 A | 2024-09-10 A | 13 | 100% |  |  |  |  |  |  |  |
| 5 | 1.1.3 | 0.6 Прототип с отработкой замечаний ПО и показ ФЗ | milestone | 0d | 2024-10-10 | 2024-10-10 | 20 |  |  | 83.65d |  |  |  |  |  |
| 6 | 1.1.4 | 0.9 ФГ МНГ | milestone | 0d | 2024-11-21 | 2024-11-21 | 23 |  |  | 33.52d | 0d |  |  |  |  |
| 7 | 1.8 | 0.9 ФГ МНГ | milestone | 0d | 2024-11-21 | 2024-11-21 | 6 |  |  | 52.75d |  |  |  |  |  |
| 8 | 1.1.6 | 0.9.1 Совместное тестирование всех ЭФ и БП | milestone | 0d | 2024-12-12 | 2024-12-12 | 43 |  |  | 37.75d |  |  |  |  |  |
| 9 | 1.1.7 | 0.9.2 ОЭ МНГ | milestone | 0d | 2025-01-16 | 2025-01-16 | 51 |  |  | 12.75d | 0d |  |  |  |  |
| 10 | 1.10 | 0.9.2 ОЭ МНГ | milestone | 0d | 2025-01-16 | 2025-01-16 | 9 |  |  | 12.75d |  |  |  |  |  |
| 11 | 1.1.9 | 1.0 ОПЭ МНГ | milestone | 0d | 2025-02-04 | 2025-02-04 | 35 |  |  | 0d |  |  |  |  |  |
| 12 | 1.12 | 1.0 ОПЭ МНГ | milestone | 0d | 2025-02-04 | 2025-02-04 | 11 |  |  | 0d |  |  |  |  |  |
| 13 | 1.2 | **0.5 - Прототип для согласования с ПО** |  | 26.67d? | 2024-08-05 A | 2024-09-10 A |  | 100% |  |  |  |  |  | 184.03h | 184.03h |
| 14 | 1.2.1 | Анализ ФТ |  | 3d? | 2024-08-05 A | 2024-08-08 A | 3 | 100% |  |  |  |  | Нарубина | 24.03h | 24.03h |
| 15 | 1.2.2 | Фиксация финальной версии US |  | 2d? | 2024-08-08 A | 2024-08-12 A | 14 | 100% |  |  |  |  | Нарубина | 16h | 16h |
| 16 | 1.2.3 | Разработка БП |  | 5d? | 2024-08-12 A | 2024-08-19 A | 15 | 100% |  |  |  |  | Нарубина | 40h | 40h |
| 17 | 1.2.4 | Согласование и бейзлайн БП |  | 16.67d? | 2024-08-19 A | 2024-09-10 A | 16 | 100% |  |  |  |  | Нарубина [30%] | 40h | 40h |
| 18 | 1.2.5 | Разработка Концепции реализации |  | 4.29d? | 2024-08-19 A | 2024-08-23 A | 16 | 100% |  |  |  |  | Нарубина [70%] | 24h | 24h |
| 19 | 1.2.6 | Создание Прототипа |  | 7.14d? | 2024-08-23 A | 2024-09-03 A | 18 | 100% |  |  |  |  | Нарубина [70%] | 40h | 40h |
| 20 | 1.3 | **0.6 Прототип с отработкой замечаний ПО и показ ФЗ** |  | 26.67d? | 2024-09-03 A | 2024-10-10 A |  | 100% |  |  |  |  |  | 64h | 64h |
| 21 | 1.3.1 | Согласование и бейзлайн концепции реализации |  | 16.67d? | 2024-09-03 A | 2024-09-26 A | 19 | 100% |  |  |  |  | Нарубина [30%] | 40h | 40h |
| 22 | 1.3.2 | Согласование и финализация прототипа |  | 10d? | 2024-09-26 A | 2024-10-10 A | 21 | 100% |  |  |  |  | Нарубина [30%] | 24h | 24h |
| 23 | 1.4 | **0.9 ФГ Основные ЭФ и Шаблоны ПФ** |  | 64.71d? | 2024-08-23 A | 2024-11-21 |  | 55% | 29.35d? | 52.75d | 0d |  |  | 428h | 296h |
| 24 | 1.4.1 | Настройка каркаса |  | 17.86d? | 2024-09-03 A | 2024-09-27 A | 21SS, 22 | 100% |  |  |  |  | Нарубина [70%] | 100h | 100h |
| 25 | 1.4.2 | Показ каркаса | milestone | 0d | 2024-09-27 | 2024-09-27 | 24 |  |  | 73.23d |  | start no earlier than 2024-09-26 |  |  |  |
| 26 | 1.4.3 | Реализация ОСНОВНЫХ ЭФ |  | 16.67d? | 2024-09-03 A | 2024-10-09 | 21SS | 50% | 8.33d? | 0d |  |  | Нарубина [30%] | 40h | 20h |
| 27 | 1.4.4 | Разработка Шаблонов ПФ |  | 16.67d? | 2024-10-23 | 2024-11-14 | 26 |  |  | 0d |  |  | Нарубина [30%] | 40h |  |
| 28 | 1.4.5 | Демо и финализация каркаса |  | 5d? | 2024-11-15 | 2024-11-21 | 24, 27 |  |  | 0d |  |  | Нарубина | 40h |  |

| ID | WBS | Task | Type | Duration | Start | Finish | Predecessors | Complete | Total slack | Free slack | Resources | Work | Actual work |
| --- | --- | --- | --- | --- | --- | --- | --- | --- | --- | --- | --- | --- | --- |
| 29 | 1.4.6 | **Разработка 1 итерация каркасная** |  | 17d? | 2024-08-23 A | 2024-09-17 A |  | 100% |  |  |  | 176h | 176h |
| 30 | 1.4.6.1 | Разработка ПЗ по бэку |  | 4d? | 2024-08-23 A | 2024-08-29 A | 18 | 100% |  |  | Нарубина | 32h | 32h |
| 31 | 1.4.6.2 | Реализация бэк методов |  | 5d? | 2024-08-29 A | 2024-09-05 A | 30 | 100% |  |  | Павленко | 40h | 40h |
| 32 | 1.4.6.3 | Разработка ПЗ по фронту |  | 6d? | 2024-08-29 A | 2024-09-06 A | 30 | 100% |  |  | Нарубина | 48h | 48h |
| 33 | 1.4.6.4 | Разрабокта фронта |  | 7d? | 2024-09-06 A | 2024-09-17 A | 32 | 100% |  |  | Фронт-разработчик1 | 56h | 56h |
| 34 | 1.4.7 | РВИ и ЛМД |  | 10d? | 2024-10-09 | 2024-10-23 | 32, 26 |  | 49.42d | 0d | Нарубина [40%] | 32h |  |
| 35 | 1.5 | **0.9.1 Подготовка релизной версии для ОПЭ** |  | 74.42d? | 2024-10-23 | 2025-02-04 |  |  | 0d |  |  | 948h |  |
| 36 | 1.5.1 | **Разработка 2 итерация Счастливый путь** |  | 25d? | 2024-10-23 | 2024-11-27 | 34 |  | 49.42d |  |  | 260h |  |
| 37 | 1.5.1.1 | Финальные уточнения ПЗ по бэку |  | 5d? | 2024-10-23 | 2024-10-30 |  |  | 49.42d | 0d | Нарубина | 40h |  |
| 38 | 1.5.1.2 | Реализация бэк методов |  | 7.5d? | 2024-10-30 | 2024-11-08 | 37 |  | 61.92d |  | Павленко | 60h |  |
| 39 | 1.5.1.3 | Финальные уточнения ПЗ по фронту |  | 10d? | 2024-10-30 | 2024-11-13 | 37 |  | 49.42d | 0d | Нарубина | 80h |  |
| 40 | 1.5.1.4 | Разрабокта фронта |  | 10d? | 2024-11-13 | 2024-11-27 | 39 |  | 49.42d |  | Фронт-разработчик1 | 80h |  |
| 41 | 1.5.2 | старт | milestone | 0d | 2024-11-21 | 2024-11-21 | 28 |  | 0d |  |  |  |  |
| 42 | 1.5.3 | Реализация всех ЭФ паралельно |  | 5d? | 2024-11-22 | 2024-11-28 | 41 |  | 47.75d |  | Нарубина [60%] | 24h |  |
| 43 | 1.5.4 | Реализация обработчиков |  | 15d? | 2024-11-22 | 2024-12-12 | 41 |  | 37.75d | 0d | Нарубина [20%] | 24h |  |
| 44 | 1.5.5 | Реализация ПФ паралельно |  | 35d? | 2024-11-22 | 2025-01-09 | 41 |  | 0d |  | Нарубина [20%] | 56h |  |
| 45 | 1.5.6 | **Разработка 3 итерация ФИНАЛИЗАЦИЯ** |  | 21d? | 2024-11-22 | 2024-12-23 | 41 |  | 31.75d |  |  | 208h |  |
| 46 | 1.5.6.1 | Совместные тестирования и уточнения ПЗ по бэку |  | 4d? | 2024-11-22 | 2024-11-28 | 34 |  | 31.75d | 0d | Нарубина | 32h |  |
| 47 | 1.5.6.2 | Реализация бэк методов |  | 5d? | 2024-11-28 | 2024-12-05 | 46 |  | 43.75d |  | Павленко | 40h |  |
| 48 | 1.5.6.3 | Тесты и финальные уточнения ПЗ по фронту |  | 10d? | 2024-11-28 | 2024-12-12 | 46 |  | 31.75d | 0d | Нарубина | 80h |  |
| 49 | 1.5.6.4 | Финализация фронта |  | 7d? | 2024-12-12 | 2024-12-23 | 48 |  | 31.75d |  | Фронт-разработчик1 | 56h |  |
| 50 | 1.5.7 | Релизные тесты |  | 3d? | 2025-01-10 | 2025-01-14 | 44 |  | 0d |  | Нарубина; Методолог2 | 48h |  |
| 51 | 1.5.8 | Регресс тесты |  | 2d? | 2025-01-15 | 2025-01-16 | 50 |  | 0d |  | Нарубина; Методолог2 | 32h |  |
| 52 | 1.5.9 | **Разработка СОПРОВОЖДЕНИЕ** |  | 5d? | 2025-01-15 | 2025-01-21 | 50 |  | 9.75d |  |  | 100h |  |
| 53 | 1.5.9.1 | Тесты и Уточнения ПЗ по бэку |  | 5d? | 2025-01-15 | 2025-01-21 |  |  | 9.75d |  | Нарубина [50%] | 20h |  |
| 54 | 1.5.9.2 | Стабилизация бэк методов |  | 2.5d? | 2025-01-15 | 2025-01-17 |  |  | 12.25d |  | Павленко | 20h |  |
| 55 | 1.5.9.3 | Тесты и Уточнения ПЗ по фронту |  | 5d? | 2025-01-15 | 2025-01-21 |  |  | 9.75d |  | Нарубина [50%] | 20h |  |
| 56 | 1.5.9.4 | Стабилизация фронта |  | 5d? | 2025-01-15 | 2025-01-21 |  |  | 9.75d |  | Фронт-разработчик1 | 40h |  |
| 57 | 1.5.10 | Стабилизация |  | 3.75d? | 2025-01-17 | 2025-01-22 | 51 |  | 0d |  | Нарубина; Методолог2 | 60h |  |
| 58 | 1.5.11 | Релизные тесты |  | 2d? | 2025-01-22 | 2025-01-24 | 57 |  | 0d |  | Методолог2 | 16h |  |
| 59 | 1.5.12 | Регресс тесты |  | 2d? | 2025-01-22 | 2025-01-24 | 58SS |  | 0d |  | Нарубина | 16h |  |
| 60 | 1.5.13 | Развертывание |  | 4d? | 2025-01-24 | 2025-01-30 | 59 |  | 0d |  | Нарубина; Методолог2 | 64h |  |
| 61 | 1.5.14 | Релизные тесты |  | 3d? | 2025-01-30 | 2025-02-04 | 60 |  | 0d |  | Методолог2 | 24h |  |
| 62 | 1.5.15 | Регресс тесты |  | 2d? | 2025-01-30 | 2025-02-03 | 61SS |  | 1d | 0d | Нарубина | 16h |  |
| 63 | 1.5.16 | Выпуск | milestone | 0d | 2025-02-03 | 2025-02-03 | 62 |  | 1d |  |  |  |  |
