# ПроектСИЭР v.0.2

Schedule from MS Project, 2024-09-02 to 2024-12-12.
DIT

## Calendars

- Стандартный: Mon-Fri 09:00-13:00, 14:00-18:00; Sat-Sun off.

## Resources

| Resource | Group |
| --- | --- |
| Методолог1 | Методологи |
| Разработчик1 | Разраб |
| Аналитик1 | Аналитики |
| Фронт-разработчик1 | Разраб |
| Методолог2 | Методологи |
| Методолог3 | Методологи |
| Аналитик2 | Аналитики |
| Разработчик2 | Разраб |
| Фронт-разработчик2 | Разраб |
| Аналитик3 | Аналитики |
| Разработчик3 | Разраб |
| Фронт-разработчик3 | Разраб |
| Методолог4 | Методологи |
| Методолог5 |  |
| Методолог6 |  |

## Schedule

| ID | WBS | Task | Type | Duration | Start | Finish | Predecessors | Total slack | Free slack | Constraint | Resources | Work | Комментарий |
| --- | --- | --- | --- | --- | --- | --- | --- | --- | --- | --- | --- | --- | --- |
| 1 | 1 | **Типовой шаблон СИЭР (средний модуль)** |  | 73.71d? | 2024-09-02 | 2024-12-12 |  | 0d |  |  |  | 935.03h |  |
| 2 | 1.1 | **Вехи** |  | 73.71d | 2024-09-02 | 2024-12-12 |  | 0d |  |  |  |  |  |
| 3 | 1.1.1 | Старт | milestone | 0d | 2024-09-02 | 2024-09-02 |  | 0d |  | start no earlier than 2024-09-02 |  |  |  |
| 4 | 1.1.2 | 0.5 - Прототип для согласования с ПО | milestone | 0d | 2024-10-08 | 2024-10-08 | 10 | 100.61d |  |  |  |  |  |
| 5 | 1.1.3 | 0.6 Прототип с отработкой замечаний ПО и показ ФЗ | milestone | 0d | 2024-11-07 | 2024-11-07 | 17 | 79.18d |  |  |  |  |  |
| 6 | 1.1.4 | 0.9 ФГ | milestone | 0d | 2024-11-21 | 2024-11-21 | 20 | 46d |  |  |  |  |  |
| 7 | 1.1.5 | 0.9.1 Совместное тестирование всех ЭФ и БП | milestone | 0d | 2024-12-02 | 2024-12-02 | 39 | 7.75d |  |  |  |  |  |
| 8 | 1.1.6 | 0.9.2 ОЭ | milestone | 0d | 2024-12-04 | 2024-12-04 | 47 | 6.5d |  |  |  |  |  |
| 9 | 1.1.7 | 1.0 ОПЭ | milestone | 0d | 2024-12-12 | 2024-12-12 | 31 | 0d |  |  |  |  |  |
| 10 | 1.2 | **0.5 - Прототип для согласования с ПО** |  | 26.67d? | 2024-09-02 | 2024-10-08 |  | 0d |  |  |  | 184.03h |  |
| 11 | 1.2.1 | Анализ ФТ |  | 3d? | 2024-09-02 | 2024-09-05 | 3 | 0d |  |  | Методолог1 | 24.03h |  |
| 12 | 1.2.2 | Фиксация финальной версии US |  | 2d? | 2024-09-05 | 2024-09-09 | 11 | 0d |  |  | Методолог1 | 16h |  |
| 13 | 1.2.3 | Разработка БП |  | 5d? | 2024-09-09 | 2024-09-16 | 12 | 0d |  |  | Методолог1 | 40h |  |
| 14 | 1.2.4 | Согласование и бейзлайн БП |  | 16.67d? | 2024-09-16 | 2024-10-08 | 13 | 100.61d |  |  | Методолог1 [30%] | 40h |  |
| 15 | 1.2.5 | Разработка Концепции реализации |  | 4.29d? | 2024-09-16 | 2024-09-20 | 13 | 0d |  |  | Методолог1 [70%] | 24h |  |
| 16 | 1.2.6 | Создание Прототипа |  | 7.14d? | 2024-09-20 | 2024-10-01 | 15 | 0d |  |  | Методолог1 [70%] | 40h |  |
| 17 | 1.3 | **0.6 Прототип с отработкой замечаний ПО и показ ФЗ** |  | 26.67d? | 2024-10-01 | 2024-11-07 |  | 0d |  |  |  | 64h |  |
| 18 | 1.3.1 | Согласование и бейзлайн концепции реализации |  | 16.67d? | 2024-10-01 | 2024-10-24 | 16 | 0d |  |  | Методолог1 [30%] | 40h |  |
| 19 | 1.3.2 | Согласование и финализация прототипа |  | 10d? | 2024-10-24 | 2024-11-07 | 18 | 0d |  |  | Методолог1 [30%] | 24h |  |
| 20 | 1.4 | **0.9 ФГ Основные ЭФ и Шаблоны ПФ** |  | 44.17d? | 2024-09-20 | 2024-11-21 |  | 14.17d | 0d |  |  | 306h |  |
| 21 | 1.4.1 | Настройка каркаса |  | 5.36d? | 2024-11-07 | 2024-11-14 | 18SS, 19 | 0d |  |  | Методолог1 [70%] | 30h |  |
| 22 | 1.4.2 | Реализация ОСНОВНЫХ ЭФ |  | 12.5d? | 2024-10-01 | 2024-10-17 | 18SS | 23.1d | 0d |  | Методолог2 [30%] | 30h | = 20% * WE |
| 23 | 1.4.3 | Разработка Шаблонов ПФ |  | 12.5d? | 2024-10-17 | 2024-11-05 | 22 | 23.1d |  |  | Методолог2 [30%] | 30h | = 20% * WE |
| 24 | 1.4.4 | Демо и финализация каркаса |  | 5d? | 2024-11-14 | 2024-11-21 | 21, 23 | 0d |  |  | Методолог1 | 40h |  |

| ID | WBS | Task | Type | Duration | Start | Finish | Predecessors | Total slack | Free slack | Resources | Work | Комментарий |
| --- | --- | --- | --- | --- | --- | --- | --- | --- | --- | --- | --- | --- |
| 25 | 1.4.5 | **Разработка 1 итерация каркасная** |  | 11d? | 2024-09-20 | 2024-10-07 |  | 23.42d |  |  | 96h |  |
| 26 | 1.4.5.1 | Разработка ПЗ по бэку |  | 4d? | 2024-09-20 | 2024-09-26 | 15 | 67.99d | 0d | Аналитик1 | 32h |  |
| 27 | 1.4.5.2 | Реализация бэк методов |  | 1d? | 2024-09-26 | 2024-09-27 | 26 | 107.99d |  | Разработчик1 | 8h | = 20% * WE_Back_SD |
| 28 | 1.4.5.3 | Разработка ПЗ по фронту |  | 6d? | 2024-09-26 | 2024-10-04 | 26 | 67.99d | 0d | Аналитик1 | 48h |  |
| 29 | 1.4.5.4 | Разрабокта фронта |  | 1d? | 2024-10-04 | 2024-10-07 | 28 | 101.99d |  | Фронт-разработчик1 | 8h | = 20% * WE_Front_SD |
| 30 | 1.4.6 | РВИ и ЛМД |  | 10d? | 2024-10-04 | 2024-10-18 | 28 | 67.99d | 0d | Аналитик1 | 80h | = 30% от WE |
| 31 | 1.5 | **0.9.1 Подготовка релизной версии для ОПЭ** |  | 39.42d? | 2024-10-18 | 2024-12-12 |  | 0d |  |  | 381h |  |
| 32 | 1.5.1 | **Разработка 2 итерация Счастливый путь** |  | 16d? | 2024-10-18 | 2024-11-11 | 30 | 23.42d |  |  | 136h |  |
| 33 | 1.5.1.1 | Финальные уточнения ПЗ по бэку |  | 5d? | 2024-10-18 | 2024-10-25 |  | 67.99d | 0d | Аналитик1 | 40h |  |
| 34 | 1.5.1.2 | Реализация бэк методов |  | 1d? | 2024-10-25 | 2024-10-28 | 33 | 86.99d |  | Разработчик1 | 8h | = 25% * WE_Back_SD |
| 35 | 1.5.1.3 | Финальные уточнения ПЗ по фронту |  | 10d? | 2024-10-25 | 2024-11-08 | 33 | 67.99d | 0d | Аналитик1 | 80h |  |
| 36 | 1.5.1.4 | Разрабокта фронта |  | 1d? | 2024-11-08 | 2024-11-11 | 35 | 76.99d |  | Фронт-разработчик1 | 8h | = 25% * WE_Front_SD |
| 37 | 1.5.2 | старт | milestone | 0d | 2024-11-21 | 2024-11-21 | 24 | 0d |  |  |  |  |
| 38 | 1.5.3 | Реализация всех ЭФ паралельно |  | 2.08d? | 2024-11-21 | 2024-11-25 | 37 | 13.17d |  | Методолог1 [60%] | 10h | = 50% * WE / 25% * WE |
| 39 | 1.5.4 | Реализация обработчиков |  | 7.5d? | 2024-11-21 | 2024-12-02 | 37 | 7.75d | 0d | Методолог1 [20%] | 12h |  |
| 40 | 1.5.5 | Реализация ПФ паралельно |  | 6.25d? | 2024-11-21 | 2024-11-29 | 37 | 0d |  | Методолог1 [20%] | 10h |  |
| 41 | 1.5.6 | **Разработка 3 итерация ИНТЕГРАЦИИ и Полный путь** |  | 5.12d? | 2024-11-21 | 2024-11-28 | 37 | 10.12d |  |  | 51h |  |
| 42 | 1.5.6.1 | Совместные тестирования и уточнения ПЗ по бэку |  | 2d? | 2024-11-21 | 2024-11-25 | 30 | 10.12d | 0d | Аналитик1 | 16h |  |
| 43 | 1.5.6.2 | Реализация бэк методов |  | 1.25d? | 2024-11-25 | 2024-11-26 | 42 | 12d |  | Разработчик1 | 10h | = 40% * WE_Back_SD |
| 44 | 1.5.6.3 | Тесты и финальные уточнения ПЗ по фронту |  | 1.25d? | 2024-11-25 | 2024-11-26 | 42 | 10.12d | 0d | Аналитик1 | 10h |  |
| 45 | 1.5.6.4 | Финализация фронта |  | 1.88d? | 2024-11-26 | 2024-11-28 | 44 | 10.12d |  | Фронт-разработчик1 | 15h | = 40% * WE_Front_SD |
| 46 | 1.5.7 | Релизные тесты |  | 1.5d? | 2024-11-29 | 2024-12-03 | 40 | 0d |  | Методолог1; Методолог2 | 24h |  |
| 47 | 1.5.8 | Регресс тесты |  | 1d? | 2024-12-03 | 2024-12-04 | 46 | 0d |  | Методолог1; Методолог2 | 16h |  |
| 48 | 1.5.9 | **Разработка ФИНАЛИЗАЦИЯ и СОПРОВОЖДЕНИЕ** |  | 1.25d? | 2024-12-03 | 2024-12-04 | 46 | 6.25d |  |  | 14h |  |
| 49 | 1.5.9.1 | Тесты и Уточнения ПЗ по бэку |  | 1.25d? | 2024-12-03 | 2024-12-04 |  | 6.25d |  | Аналитик1 [50%] | 5h |  |
| 50 | 1.5.9.2 | Стабилизация бэк методов |  | 0.38d? | 2024-12-03 | 2024-12-03 |  | 7.12d |  | Разработчик1 | 3h | = 15% * WE_Back_SD |
| 51 | 1.5.9.3 | Тесты и Уточнения ПЗ по фронту |  | 0.75d? | 2024-12-03 | 2024-12-03 |  | 6.75d |  | Аналитик1 [50%] | 3h |  |
| 52 | 1.5.9.4 | Стабилизация фронта |  | 0.38d? | 2024-12-03 | 2024-12-03 |  | 7.12d |  | Фронт-разработчик1 | 3h | = 15% * WE_Front_SD |
| 53 | 1.5.10 | Стабилизация |  | 2.5d? | 2024-12-04 | 2024-12-06 | 47 | 0d |  | Методолог1; Методолог2 | 40h |  |
| 54 | 1.5.11 | Релизные тесты |  | 2d? | 2024-12-06 | 2024-12-10 | 53 | 0d |  | Методолог2 | 16h |  |
| 55 | 1.5.12 | Регресс тесты |  | 1d? | 2024-12-06 | 2024-12-09 | 54SS | 0d |  | Методолог1 | 8h |  |
| 56 | 1.5.13 | Развертывание |  | 2d | 2024-12-09 | 2024-12-11 | 55 | 0d |  | Методолог1; Методолог2 | 32h |  |
| 57 | 1.5.14 | Релизные тесты |  | 1d? | 2024-12-11 | 2024-12-12 | 56 | 0d |  | Методолог2 | 8h |  |
| 58 | 1.5.15 | Регресс тесты |  | 0.5d? | 2024-12-11 | 2024-12-12 | 57SS | 0.5d | 0d | Методолог1 | 4h |  |
| 59 | 1.5.16 | Выпуск | milestone | 0d | 2024-12-12 | 2024-12-12 | 58 | 0.5d |  |  |  |  |
